# 甘特图1

How a schedule from MS Project changed from version to version. A marks actual dates.

## Version 1 (data date 2017-11-11, saved 2017-11-11)

Note of the change: 再次整理

| ID | WBS | Task | Duration | Start | Finish | Predecessors | Complete | Constraint |
| --- | --- | --- | --- | --- | --- | --- | --- | --- |
| 1 | 11 | **项目启动** | 15.33d | 2017-09-28 A | 2017-10-20 A |  | 100% |  |
| 2 |  | 团队建立 | 0.67d | 2017-09-28 A | 2017-09-28 A |  | 100% |  |
| 3 |  | 搜集文档模板并确定模版标准 | 2d | 2017-09-29 A | 2017-10-01 A | 2 | 100% |  |
| 4 |  | 软件安装 | 3.33d | 2017-10-02 A | 2017-10-06 A | 3 | 100% |  |
| 5 |  | 撰写《可行性研究报告》并进行初次提交 | 4d | 2017-10-02 A | 2017-10-07 A | 3 | 100% | start no earlier than 2017-10-08 |
| 6 |  | 撰写《项目开发设计》报告并进行初次提交 | 4d | 2017-10-08 A | 2017-10-13 A | 2, 3, 4, 5 | 100% |  |
| 7 |  | 修改《可行性研究报告》 | 4.67d | 2017-10-08 A | 2017-10-14 A | 5 | 100% | start no earlier than 2017-10-13 |
| 8 |  | 修改《项目开发设计》报告 | 4.67d | 2017-10-14 A | 2017-10-20 A | 6 | 100% |  |
| 9 |  | 提交《可行性研究报告》与《项目开发设计》报告 | 0.67d | 2017-10-15 A | 2017-10-15 A | 7 | 100% |  |
| 10 | 12 | **项目规划** | 10d | 2017-10-20 | 2017-11-03 | 1 | 81% |  |
| 11 |  | 撰写WBS图、OBS图、gantt图 | 1.33d | 2017-10-16 A | 2017-10-17 A | 9 | 100% | start no earlier than 2017-10-23 |
| 12 |  | 撰写《项目章程》 | 3.33d | 2017-10-16 A | 2017-10-20 A | 9 | 100% | start no earlier than 2017-10-20 |
| 13 |  | 撰写《项目总体计划》 | 3.33d | 2017-10-16 A | 2017-10-20 A | 9 | 100% | start no earlier than 2017-10-23 |
| 14 |  | 撰写《需求工程计划--初步》并提交 | 3.33d | 2017-10-16 A | 2017-10-20 A | 9 | 100% |  |
| 15 |  | UML概述ppt制作 | 2.67d | 2017-10-25 A | 2017-10-28 A |  | 100% |  |
| 16 |  | UML概述ppt制作 | 2.67d | 2017-10-25 A | 2017-10-28 A |  | 100% |  |
| 17 |  | UML概述ppt制作 | 2.33d | 2017-11-10 A | 2017-11-12 |  | 36% |  |
| 18 |  | UML概述ppt制作 | 2.67d | 2017-10-25 A | 2017-10-28 A |  | 100% |  |
| 19 |  | 例会 | 1d | 2017-09-29 A | 2017-09-29 A |  | 100% |  |
| 20 |  | 例会 | 1d | 2017-10-13 A | 2017-10-13 A |  | 100% |  |
| 21 |  | 例会 | 1d | 2017-10-20 A | 2017-10-20 A |  | 100% |  |
| 22 |  | 例会 | 1d | 2017-10-27 A | 2017-10-27 A |  | 100% |  |
| 23 |  | 例会 | 1d | 2017-11-04 A | 2017-11-04 A |  | 100% |  |
| 24 |  | 例会 | 1d | 2017-11-11 | 2017-11-11 |  |  |  |
| 25 |  | 例会 | 1d | 2017-11-17 | 2017-11-17 |  |  |  |
| 26 |  | 例会 | 1d | 2017-11-24 | 2017-11-24 |  |  |  |
| 27 |  | 例会 | 1d | 2017-12-01 | 2017-12-01 |  |  |  |
| 28 |  | 例会 | 1d | 2017-12-08 | 2017-12-08 |  |  |  |
| 29 |  | 例会 | 1d | 2017-12-15 | 2017-12-15 |  |  |  |
| 30 |  | 例会 | 1d | 2017-12-22 | 2017-12-22 |  |  |  |
| 31 |  | 例会 | 1d | 2017-12-29 | 2017-12-29 |  |  |  |
| 32 |  | 例会 | 1d | 2018-01-05 | 2018-01-05 |  |  |  |
| 33 |  | 提交《项目章程》、《项目总体计划》 | 0.67d | 2017-10-25 A | 2017-10-25 A | 13, 12 | 100% |  |
| 34 |  | 撰写《QA计划》 | 4.83d | 2017-10-30 A | 2017-11-05 A | 33 | 100% |  |
| 35 |  | 提交《QA计划》和项目各类修改文档 | 0.67d | 2017-11-05 A | 2017-11-05 A | 34 | 100% |  |
| 36 |  | 修改《需求工程项目计划》 | 4.67d | 2017-10-28 A | 2017-11-03 A | 14 | 100% |  |
| 37 | 12.13 | **修改《需求工程项目计划》** | 4d | 2017-10-21 A | 2017-10-26 | 14 | 100% |  |
| 38 |  | 修改《成本管理计划》 | 2d | 2017-10-21 A | 2017-10-23 A | 14 | 100% |  |
| 39 |  | 修改《风险管理计划》 | 2d | 2017-10-21 A | 2017-10-23 A | 14 | 100% |  |
| 40 |  | 修改《范围管理计划》 | 2d | 2017-10-21 A | 2017-10-23 A | 14 | 100% |  |
| 41 |  | 修改《质量管理计划》 | 2d | 2017-10-21 A | 2017-10-23 A | 14 | 100% |  |
| 42 |  | 修改《人力资源管理计划》 | 2d | 2017-10-21 A | 2017-10-23 A | 14 | 100% |  |
| 43 | 13 | **项目执行** | 34.67d | 2017-11-05 | 2017-12-26 | 10 | 16% |  |
| 44 |  | 《需求工程项目计划》评审 | 2.67d | 2017-11-04 A | 2017-11-07 A | 36 | 100% | start no earlier than 2017-11-03 |
| 45 |  | 修改《需求工程项目计划》 | 1.33d | 2017-11-06 A | 2017-11-07 A | 44 | 100% |  |
| 46 |  | 提交《需求工程项目计划》 | 0.67d | 2017-11-08 A | 2017-11-08 A | 45 | 100% |  |
| 47 | 13.4 | **需求分析** | 29.33d | 2017-11-13 | 2017-12-26 | 44 | 8% |  |
| 48 | 13.4.1 | **撰写《用户代表确认文档》** | 1.33d | 2017-11-14 | 2017-11-15 | 44 | 100% |  |
| 49 |  | 撰写《教师代表确认文档》 | 0.67d | 2017-11-08 A | 2017-11-08 A | 44 | 100% |  |
| 50 |  | 撰写《学生代表确认文档》 | 0.67d | 2017-11-08 A | 2017-11-08 A | 44 | 100% |  |
| 51 |  | 撰写《管理员代表确认文档》 | 0.67d | 2017-11-08 A | 2017-11-08 A | 44 | 100% |  |
| 52 |  | 界面原型设计-初步 | 5d | 2017-11-13 | 2017-11-19 | 48 |  |  |
| 53 | 13.4.3 | **撰写用例文档** | 3.67d | 2017-11-17 | 2017-11-22 | 52 |  |  |
| 54 |  | 撰写《教师用例文档》 | 2.33d | 2017-11-24 | 2017-11-26 | 52 |  |  |
| 55 |  | 撰写《学生用例文档》 | 2.33d | 2017-11-24 | 2017-11-26 | 52 |  |  |
| 56 |  | 撰写《管理员用例文档》 | 2.33d | 2017-11-24 | 2017-11-26 | 52 |  |  |
| 57 |  | 撰写《游客用例文档》 | 2.33d | 2017-11-24 | 2017-11-26 | 52 |  |  |
| 58 |  | 《前景与范围文档》修改 | 0.67d | 2017-11-19 | 2017-11-19 | 52 |  |  |
| 59 |  | 提交《用例与用例文档》、界面原型、《前景与范围》、《用户群分类》 | 0.67d | 2017-11-20 | 2017-11-20 | 48, 52 |  |  |
| 60 |  | 修改《学生用例文档》 | 2d | 2017-11-22 | 2017-11-24 | 59 |  |  |
| 61 |  | 第一次访谈客户代表 | 0.33d | 2017-11-13 | 2017-11-13 | 59 |  |  |
| 62 |  | 第一次访谈教师代表 | 0.67d | 2017-11-27 | 2017-11-27 | 59 |  |  |
| 63 |  | 修改界面原型 | 1.33d | 2017-11-19 | 2017-11-20 | 52 |  |  |
| 64 |  | 修改《教师用例文档》 | 1.33d | 2017-11-22 | 2017-11-23 | 54 |  |  |
| 65 |  | 修改《学生用例文档》 | 2d | 2017-12-01 | 2017-12-03 | 62 |  |  |
| 66 |  | 草拟需求规格说明书 | 2d | 2017-11-21 | 2017-11-23 | 59 |  |  |
| 67 |  | 撰写《数据字典》 | 0.67d | 2017-11-26 | 2017-11-26 | 62 |  |  |
| 68 |  | 提交《用例与用例文档》、界面原型、ER图、《需求规格说明书》 | 0.67d | 2017-12-04 | 2017-12-04 | 62 |  |  |
| 69 |  | 第二次访谈教师代表 | 0.67d | 2017-12-05 | 2017-12-05 | 62 |  |  |
| 70 |  | 修改界面原型 | 1.33d | 2017-12-06 | 2017-12-07 | 69 |  |  |

| ID | WBS | Task | Duration | Start | Finish | Predecessors | Complete |
| --- | --- | --- | --- | --- | --- | --- | --- |
| 71 |  | 修改《教师用例文档》 | 0.67d | 2017-11-24 | 2017-11-24 | 64 |  |
| 72 |  | 修改数据字典 | 2d | 2017-11-08 A | 2017-11-11 | 67 | 75% |
| 73 |  | 撰写《软件用户手册》 | 0.67d | 2017-11-21 | 2017-11-21 | 59 |  |
| 74 |  | 修改《教师用例文档》 | 1.33d | 2017-12-09 | 2017-12-10 | 64 |  |
| 75 |  | 修改《学生用例文档》 | 0.67d | 2017-12-10 | 2017-12-10 | 65 |  |
| 76 |  | 修改《软件需求规格说明书》 | 1.33d | 2017-11-24 | 2017-11-25 | 66 |  |
| 77 |  | 修改《管理员用例文档》 | 0.67d | 2017-11-22 | 2017-11-22 | 56 |  |
| 78 |  | 修改《教师用例文档》 | 0.67d | 2017-12-16 | 2017-12-16 | 74 |  |
| 79 |  | 修改《教师测试用例》 | 0.67d | 2017-11-25 | 2017-11-25 | 71 |  |
| 80 |  | 修改数据字典 | 1.33d | 2017-12-15 | 2017-12-16 | 72 |  |
| 81 |  | 修改《软件用户手册》 | 0.67d | 2017-12-15 | 2017-12-15 | 73 |  |
| 82 |  | SRS评审 | 3d | 2017-11-26 | 2017-11-30 | 76 |  |
| 83 |  | 修改《软件需求规格说明书》 | 1.33d | 2017-12-23 | 2017-12-24 | 76 |  |
| 84 |  | JAD会议 | 0.67d | 2017-11-30 | 2017-12-01 | 82 |  |
| 85 | 14 | **项目控制** | 5d | 2017-12-25 | 2017-12-31 |  |  |
| 86 | 14.1 | **需求变更** | 3.67d | 2017-12-25 | 2017-12-29 | 82 |  |
| 87 |  | 撰写《需求变更文档》并提交 | 2d | 2017-12-01 | 2017-12-04 | 82 |  |
| 88 |  | 撰写《需求变更申请报告》并提交 | 2d | 2017-12-01 | 2017-12-04 | 82 |  |
| 89 |  | 撰写CCB章程 | 1.67d | 2017-12-01 | 2017-12-03 | 82 |  |
| 90 | 15 | **项目收尾** | 11.33d | 2018-01-01 | 2018-01-17 | 43 |  |
| 91 |  | 撰写《项目绩效评价》 | 1d | 2018-01-02 | 2018-01-03 | 89 |  |
| 92 |  | 撰写《系统设计与实现计划》 | 1d | 2018-01-01 | 2018-01-02 | 89 |  |
| 93 |  | 撰写《软件概要设计说明》 | 2.5d | 2018-01-04 | 2018-01-07 | 89 |  |
| 94 |  | 撰写《测试计划》 | 1.5d | 2018-01-04 | 2018-01-05 | 89 |  |
| 95 |  | 撰写《安装部署计划》 | 2.5d | 2018-01-04 | 2018-01-07 | 89 |  |
| 96 |  | 撰写《培训计划》 | 2d | 2018-01-06 | 2018-01-08 | 89 |  |
| 97 |  | 撰写《系统维护计划》 | 1.5d | 2018-01-09 | 2018-01-10 | 89 |  |
| 98 |  | 修改整理各类旧文档及PPT | 0.5d | 2018-01-11 | 2018-01-11 | 97 |  |
| 99 |  | 撰写《项目总结报告》及PPT | 0.5d | 2018-01-12 | 2018-01-12 | 98 |  |
| 100 |  | 修改《项目总结报告》 | 0.67d | 2018-01-13 | 2018-01-13 | 99 |  |
| 101 |  | 评审 | 0d | 2018-01-14 | 2018-01-14 | 100 |  |

## Version 2 (data date 2017-11-11, saved 2017-11-28)

Note of the change: 前景与范围修改、甘特图修改、会议记录12.1、教师用户邀请函修改、用例文档修改

Last finish 2018-01-17 → 2018-01-18 (+1d). Complete tasks 35 → 17.

Added:

| ID | Task | Duration | Start | Finish | Predecessors | Resources |
| --- | --- | --- | --- | --- | --- | --- |
| 46 | **需求获取** | 19.33d | 2017-11-05 | 2017-12-03 |  |  |
| 47 | 草拟《前景与范围》 | 2d | 2017-11-05 | 2017-11-07 | 43 | 李文杰 [20%] |
| 52 | 第一次访谈管理员代表 | 0.33d | 2017-11-28 | 2017-11-28 | 49 | 陈启强 [50%]; 李文杰 [50%]; 余泽伟 [50%]; 赵伟 [50%] |
| 54 | 第一次访谈学生代表 | 0.33d | 2017-12-02 | 2017-12-02 | 50 | 陈启强 [50%]; 李文杰 [50%]; 余泽伟 [50%]; 赵伟 [50%] |
| 72 | **撰写优先级排序表** | 0.67d? | 2017-12-02 | 2017-12-02 | 61 |  |
| 73 | 撰写《教师优先级打分表》 | 1d | 2017-12-02 | 2017-12-02 | 61 | 陈启强 [20%]; 赵伟 [20%] |
| 74 | 撰写《学生优先级打分表》 | 1d | 2017-11-02 | 2017-11-02 | 61 | 陈启强 [20%] |
| 75 | 撰写《管理员优先级打分表》 | 1d | 2017-11-02 | 2017-11-02 | 61 | 陈启强 [20%] |
| 79 | **编写测试用例** | 0.83d | 2017-11-28 | 2017-11-29 |  |  |
| 81 | 编写《学生测试用例》 | 1d | 2017-11-28 | 2017-11-28 |  | 赵伟 [20%] |
| 82 | 编写《管理员测试用例》 | 1d | 2017-11-28 | 2017-11-28 |  | 李文杰 [20%] |

Removed: 13 撰写《项目总体计划》; 60 修改《学生用例文档》; 65 修改《学生用例文档》; 71 修改《教师用例文档》; 74 修改《教师用例文档》; 75 修改《学生用例文档》; 78 修改《教师用例文档》; 80 修改数据字典

Changed:

| ID | Task | Start | Finish | Duration | Complete | Predecessors | Other |
| --- | --- | --- | --- | --- | --- | --- | --- |
| 1 | **项目启动** |  | 2017-10-20 A → 2017-10-20 |  | 100% → 65% |  |  |
| 2 | 团队建立 |  | 2017-09-28 A → 2017-09-29 (+1d) | 0.67d → 1d | 100% → 67% |  | resources 李文杰 [50%]; 余泽伟 [50%]; 赵伟 [50%]; 陈启强 [50%] → 李文杰 [30%]; 余泽伟 [30%]; 赵伟 [30%]; 陈启强 [30%] |
| 3 | 搜集文档模板并确定模版标准 |  | 2017-10-01 A → 2017-09-30 A (-1d) | 2d → 1d |  |  | resources 李文杰 [50%]; 赵伟 [50%]; 余泽伟 [50%]; 陈启强 [50%] → 李文杰 [30%]; 赵伟 [30%]; 余泽伟 [30%]; 陈启强 [30%] |
| 4 | 软件安装 |  | 2017-10-06 A → 2017-10-07 (+1d) | 3.33d → 3.67d | 100% → 82% |  |  |
| 5 | 撰写《可行性研究报告》并进行初次提交 |  | 2017-10-07 A → 2017-10-08 (+1d) | 4d → 5d | 100% → 80% |  | constraint start no earlier than 2017-10-08 → start no earlier than 2017-10-02; resources 赵伟 → 赵伟 [50%] |
| 6 | 撰写《项目开发设计》报告并进行初次提交 |  | 2017-10-13 A → 2017-10-12 A (-1d) | 4d → 3.5d |  |  | resources 陈启强 → 陈启强 [20%]; 李文杰 [20%] |
| 7 | 修改《可行性研究报告》 |  | 2017-10-14 A → 2017-10-13 (-1d) | 4.67d → 4.17d | 100% → 0% |  | constraint start no earlier than 2017-10-13 → start no earlier than 2017-10-08; resources 余泽伟 [80%] → 赵伟 [10%] |
| 8 | 修改《项目开发设计》报告 |  | 2017-10-20 A → 2017-10-19 (-1d) | 4.67d → 0.67d | 100% → 0% |  | resources 陈启强 → 陈启强 [20%]; 李文杰 [20%] |
| 10 | **项目规划** | 2017-10-20 → 2017-10-09 (-11d) | 2017-11-03 → 2018-01-05 (+63d) | 10d → 59.67d | 81% → 54% |  |  |
| 11 | 撰写WBS图、OBS图、gantt图 | 2017-10-16 A → 2017-10-09 A (-7d) | 2017-10-17 A → 2017-10-13 (-4d) | 1.33d → 3.67d | 100% → 36% | 9 → 5 | constraint start no earlier than 2017-10-23 → start no earlier than 2017-10-09; resources 李文杰; 陈启强; 余泽伟 → 李文杰 [40%] |
| 12 | 撰写《项目章程》 |  | 2017-10-20 A → 2017-10-19 A (-1d) | 3.33d → 2.83d |  |  | resources 余泽伟 → 赵伟 [50%]; 陈启强 [10%] |
| 13 | 撰写《需求工程计划--初步》并提交 |  | 2017-10-20 A → 2017-10-19 A (-1d) | 3.33d → 2.83d |  |  | resources 赵伟 → 余泽伟 [50%] |
| 14 | UML概述ppt制作 | 2017-10-25 A → 2017-10-23 A (-2d) | 2017-10-28 A → 2017-10-26 A (-2d) |  |  |  | resources 余泽伟 → 余泽伟 [50%] |
| 15 | UML概述ppt制作 | 2017-10-25 A → 2017-10-30 A (+5d) | 2017-10-28 A → 2017-11-02 A (+5d) |  |  |  | resources 赵伟 → 李文杰 [50%] |
| 16 | UML概述ppt制作 | 2017-11-10 A → 2017-11-06 (-4d) | 2017-11-12 → 2017-11-09 (-3d) | 2.33d → 3d | 36% → 0% |  | resources 李文杰 → 李文杰 [50%] |
| 17 | UML概述ppt制作 | 2017-10-25 A → 2017-11-19 A (+25d) | 2017-10-28 A → 2017-11-19 A (+22d) | 2.67d → 1d |  |  | resources 余泽伟 → 陈启强 [200%] |
| 18 | 例会 |  | 2017-09-29 A → 2017-09-29 |  | 100% → 30% |  | resources 陈启强; 李文杰; 余泽伟; 赵伟 → 陈启强 [20%]; 李文杰 [20%]; 余泽伟 [20%]; 赵伟 [20%] |
| 19 | 例会 |  | 2017-10-13 A → 2017-10-13 |  | 100% → 30% |  | resources 陈启强; 李文杰; 余泽伟; 赵伟 → 陈启强 [20%]; 李文杰 [20%]; 余泽伟 [20%]; 赵伟 [20%] |
| 20 | 例会 |  | 2017-10-20 A → 2017-10-20 |  | 100% → 30% |  | resources 陈启强; 李文杰; 余泽伟; 赵伟 → 陈启强 [20%]; 李文杰 [20%]; 余泽伟 [20%]; 赵伟 [20%] |
| 21 | 例会 |  | 2017-10-27 A → 2017-10-27 |  | 100% → 30% |  | resources 陈启强; 李文杰; 余泽伟; 赵伟 → 陈启强 [20%]; 李文杰 [20%]; 余泽伟 [20%]; 赵伟 [20%] |
| 22 | 例会 |  | 2017-11-04 A → 2017-11-04 |  | 100% → 30% |  | resources 陈启强; 李文杰; 余泽伟; 赵伟 → 陈启强 [20%]; 李文杰 [20%]; 余泽伟 [20%]; 赵伟 [20%] |
| 23 | 例会 | 2017-11-11 → 2017-11-10 (-1d) | 2017-11-11 → 2017-11-10 (-1d) |  |  |  | resources 陈启强; 李文杰; 余泽伟; 赵伟 → 陈启强 [20%]; 李文杰 [20%]; 余泽伟 [20%]; 赵伟 [20%] |
| 24 | 例会 | 2017-11-17 → 2017-11-18 (+1d) | 2017-11-17 → 2017-11-18 (+1d) |  |  |  | resources 陈启强; 李文杰; 余泽伟; 赵伟 → 陈启强 [20%]; 李文杰 [20%]; 余泽伟 [20%]; 赵伟 [20%] |
| 25 | 例会 |  |  |  |  |  | resources 陈启强; 李文杰; 余泽伟; 赵伟 → 陈启强 [20%]; 李文杰 [20%]; 余泽伟 [20%]; 赵伟 [20%] |
| 26 | 例会 |  |  |  |  |  | resources 陈启强; 李文杰; 余泽伟; 赵伟 → 陈启强 [20%]; 李文杰 [20%]; 余泽伟 [20%]; 赵伟 [20%] |
| 27 | 例会 |  | 2017-12-08 → 2017-12-09 (+1d) |  |  |  | resources 陈启强; 李文杰; 余泽伟; 赵伟 → 陈启强 [20%]; 李文杰 [20%]; 余泽伟 [20%]; 赵伟 [20%] |
| 28 | 例会 |  | 2017-12-15 → 2017-12-16 (+1d) |  |  |  | resources 陈启强; 李文杰; 余泽伟; 赵伟 → 陈启强 [20%]; 李文杰 [20%]; 余泽伟 [20%]; 赵伟 [20%] |
| 29 | 例会 |  | 2017-12-22 → 2017-12-23 (+1d) |  |  |  | resources 陈启强; 李文杰; 余泽伟; 赵伟 → 陈启强 [20%]; 李文杰 [20%]; 余泽伟 [20%]; 赵伟 [20%] |
| 30 | 例会 |  | 2017-12-29 → 2017-12-30 (+1d) |  |  |  | resources 陈启强; 李文杰; 余泽伟; 赵伟 → 陈启强 [20%]; 李文杰 [20%]; 余泽伟 [20%]; 赵伟 [20%] |
| 31 | 例会 |  |  | 1d → 0.3d |  |  | resources 陈启强; 李文杰; 余泽伟; 赵伟 → 陈启强 [20%]; 李文杰 [20%]; 余泽伟 [20%]; 赵伟 [20%] |
| 32 | 提交《项目章程》、《项目总体计划》 |  |  |  |  | 撰写《项目总体计划》, 12 → 12 |  |
| 33 | 撰写《QA计划》 |  | 2017-11-05 A → 2017-11-03 A (-2d) | 4.83d → 3.5d |  |  | resources 赵伟 → 赵伟 [20%] |
| 35 | 修改《需求工程项目计划》 |  |  |  |  |  | resources 余泽伟; 陈启强; 李文杰; 赵伟 → 余泽伟; 陈启强 [20%] |
| 36 | **修改《需求工程项目计划》** |  |  | 4d → 4.33d | 100% → 46% |  |  |
| 37 | 修改《成本管理计划》 |  | 2017-10-23 A → 2017-10-26 (+3d) | 2d → 4.33d | 100% → 46% |  | resources 赵伟 → 李文杰 [10%]; 赵伟 [10%] |
| 38 | 修改《风险管理计划》 |  | 2017-10-23 A → 2017-10-26 (+3d) | 2d → 4.33d | 100% → 46% |  | resources 赵伟 → 李文杰 [10%] |
| 39 | 修改《范围管理计划》 |  | 2017-10-23 A → 2017-10-26 (+3d) | 2d → 4.33d | 100% → 46% |  | resources 余泽伟 → 李文杰 [10%] |
| 40 | 修改《质量管理计划》 |  | 2017-10-23 A → 2017-10-26 (+3d) | 2d → 4.33d | 100% → 46% |  | resources 李文杰 → 余泽伟 [20%] |
| 41 | 修改《人力资源管理计划》 |  | 2017-10-23 A → 2017-10-26 (+3d) | 2d → 4.33d | 100% → 46% |  | resources 陈启强; 李文杰; 余泽伟; 赵伟 → 李文杰 [10%]; 赵伟 [10%] |
| 42 | **项目执行** | 2017-11-05 → 2017-11-04 (-1d) | 2017-12-26 → 2017-12-21 (-5d) | 34.67d → 32.33d | 16% → 10% |  |  |
| 43 | 《需求工程项目计划》评审 |  | 2017-11-07 A → 2017-11-04 A (-3d) | 2.67d → 0.83d |  |  | resources 李文杰; 余泽伟; 赵伟; 陈启强 → 陈启强; 李文杰 [20%]; 余泽伟 [20%]; 赵伟 [20%] |
| 44 | 修改《需求工程项目计划》 | 2017-11-06 A → 2017-11-05 A (-1d) | 2017-11-07 A → 2017-11-07 | 1.33d → 2.33d | 100% → 36% |  | resources 李文杰 [80%] → 余泽伟 [50%] |
| 45 | 提交《需求工程项目计划》 | 2017-11-08 A → 2017-11-11 A (+3d) | 2017-11-08 A → 2017-11-11 A (+3d) | 0.67d → 0.33d |  |  | resources 赵伟 [5%] → 陈启强 [5%] |
| 48 | 第一次访谈客户代表 |  |  |  |  | 68 → 47 | resources 李文杰; 赵伟; 余泽伟; 陈启强 → 陈启强; 李文杰; 余泽伟; 赵伟 |
| 49 | 界面原型设计-初步 | 2017-11-13 → 2017-11-14 (+1d) |  | 5d → 3.67d |  | 57 → 48 | resources 陈启强; 余泽伟; 赵伟; 李文杰 → 陈启强 [30%]; 余泽伟 [30%]; 赵伟 [30%]; 李文杰 [30%] |
| 50 | 第一次访谈教师代表 | 2017-11-27 → 2017-11-20 (-7d) | 2017-11-27 → 2017-11-20 (-7d) | 0.67d → 0.33d |  | 68 → 49 | resources 李文杰; 赵伟; 余泽伟; 陈启强 → 陈启强 [50%]; 李文杰 [50%]; 余泽伟 [50%]; 赵伟 [5%] |
| 51 | 修改界面原型 | 2017-11-19 → 2017-11-25 (+6d) | 2017-11-20 → 2017-11-26 (+6d) | 1.33d → 1.67d |  | 49 → 50 | resources 陈启强 → 陈启强 [30%]; 李文杰 [30%]; 余泽伟 [30%]; 赵伟 [30%] |
| 53 | 第二次访谈教师代表 | 2017-12-05 → 2017-12-01 (-4d) | 2017-12-05 → 2017-12-01 (-4d) | 0.67d → 0.33d |  |  | resources 李文杰; 赵伟; 余泽伟; 陈启强 → 陈启强 [50%]; 李文杰 [50%]; 余泽伟 [50%]; 赵伟 [50%] |
| 55 | 修改界面原型 | 2017-12-06 → 2017-12-02 (-4d) | 2017-12-07 → 2017-12-03 (-4d) | 1.33d → 1.67d |  |  | resources 余泽伟; 陈启强 → 陈启强 [30%]; 李文杰 [30%]; 余泽伟 [30%]; 赵伟 [30%]; baseline start 2017-12-06 → none; baseline finish 2017-12-07 → none |
| 56 | **需求分析** | 2017-11-13 → 2017-11-08 (-5d) | 2017-12-26 → 2017-12-24 (-2d) | 29.33d → 31.67d | 8% → 9% |  |  |
| 57 | **撰写《用户代表确认文档》** | 2017-11-14 → 2017-11-21 A (+7d) | 2017-11-15 → 2017-11-21 A (+6d) | 1.33d → 1d |  |  |  |
| 58 | 撰写《教师代表确认文档》 | 2017-11-08 A → 2017-11-21 A (+13d) | 2017-11-08 A → 2017-11-21 A (+13d) |  |  |  | resources 李文杰 → 陈启强 [30%] |
| 59 | 撰写《学生代表确认文档》 | 2017-11-08 A → 2017-11-21 A (+13d) | 2017-11-08 A → 2017-11-21 A (+13d) |  |  |  | resources 陈启强 → 陈启强 [30%] |
| 60 | 撰写《管理员代表确认文档》 | 2017-11-08 A → 2017-11-21 A (+13d) | 2017-11-08 A → 2017-11-21 A (+13d) |  |  |  | resources 余泽伟 → 陈启强 [30%] |
| 61 | **撰写用例文档** |  | 2017-11-22 → 2017-11-26 (+4d) | 3.67d → 6.83d |  |  |  |
| 62 | 撰写《教师用例文档》 | 2017-11-24 → 2017-11-23 (-1d) |  |  |  |  | resources 李文杰 → 赵伟 [20%] |
| 63 | 撰写《学生用例文档》 | 2017-11-24 → 2017-11-23 (-1d) |  |  |  |  | resources 赵伟 → 陈启强 [20%] |
| 64 | 撰写《管理员用例文档》 | 2017-11-24 → 2017-11-23 (-1d) |  |  |  |  | resources 余泽伟 → 余泽伟 [20%] |
| 65 | 撰写《游客用例文档》 | 2017-11-24 → 2017-11-23 (-1d) |  |  |  |  | resources 陈启强 → 陈启强 [20%] |
| 66 | 《前景与范围文档》修改 | 2017-11-19 → 2017-11-14 (-5d) | 2017-11-19 → 2017-11-15 (-4d) | 0.67d → 1.67d |  |  | resources 李文杰 → 李文杰 [30%] |
| 67 | 撰写《数据字典》 | 2017-11-26 → 2017-11-23 (-3d) | 2017-11-26 → 2017-11-25 (-1d) | 0.67d → 1.67d |  |  | resources 赵伟; 余泽伟; 陈启强 → 余泽伟 [20%] |
| 68 | 提交《用例与用例文档》、界面原型、《前景与范围》、《用户群分类》 | 2017-11-20 → 2017-11-26 (+6d) | 2017-11-20 → 2017-11-26 (+6d) |  |  | 57, 49 → 57, 61, 66 |  |
| 69 | 修改《教师用例文档》 | 2017-11-22 → 2017-11-28 (+6d) | 2017-11-23 → 2017-11-29 (+6d) |  |  |  | resources 李文杰 [80%] → 赵伟 [20%] |
| 70 | 修改《管理员用例文档》 | 2017-11-22 → 2017-11-28 (+6d) | 2017-11-22 → 2017-11-28 (+6d) |  |  |  | resources 余泽伟 [80%] → 赵伟 [20%] |
| 71 | 草拟需求规格说明书 | 2017-11-21 → 2017-11-30 (+9d) | 2017-11-23 → 2017-12-03 (+10d) | 2d → 3d |  |  | resources 陈启强; 李文杰; 余泽伟; 赵伟 → 陈启强 [30%]; 李文杰 [30%]; 余泽伟 [30%]; 赵伟 [30%] |
| 76 | 修改数据字典 | 2017-11-08 A → 2017-11-28 A (+20d) | 2017-11-11 → 2017-11-30 (+19d) | 2d → 1.67d | 75% → 90% |  | resources 李文杰 [80%]; 赵伟 [80%]; 余泽伟 [80%] → 陈启强 [20%] |
| 77 | 提交《用例与用例文档》、界面原型、ER图、《需求规格说明书》 | 2017-12-04 → 2017-12-03 (-1d) | 2017-12-04 → 2017-12-03 (-1d) |  |  |  | resources 陈启强 → 陈启强 [5%] |
| 78 | 修改《软件需求规格说明书》 | 2017-11-24 → 2017-12-04 (+10d) | 2017-11-25 → 2017-12-05 (+10d) |  |  |  | resources 陈启强 [80%] → 陈启强 [20%]; 余泽伟 [20%]; 赵伟 [20%]; 李文杰 [20%] |
| 80 | 修改《教师测试用例》 | 2017-11-25 → 2017-11-28 (+3d) | 2017-11-25 → 2017-11-29 (+4d) | 0.67d → 1d |  | 修改《教师用例文档》 → none | resources 李文杰 [80%] → 赵伟 [20%] |
| 83 | 撰写《软件用户手册》 | 2017-11-21 → 2017-12-07 (+16d) | 2017-11-21 → 2017-12-10 (+19d) | 0.67d → 2.33d |  |  | resources 赵伟 → 赵伟 [20%] |

| ID | Task | Start | Finish | Duration | Other |
| --- | --- | --- | --- | --- | --- |
| 84 | 修改《软件用户手册》 |  |  |  | resources 李文杰 → 赵伟 [30%] |
| 85 | SRS评审 | 2017-11-26 → 2017-12-10 (+14d) | 2017-11-30 → 2017-12-14 (+14d) |  | resources 陈启强; 李文杰; 余泽伟; 赵伟 → 陈启强; 李文杰 [20%]; 余泽伟 [20%]; 赵伟 [20%] |
| 86 | 修改《软件需求规格说明书》 | 2017-12-23 → 2017-12-15 (-8d) | 2017-12-24 → 2017-12-16 (-8d) | 1.33d → 1.67d | resources 陈启强 [80%] → 陈启强 [50%] |
| 87 | JAD会议 | 2017-11-30 → 2017-12-21 (+21d) | 2017-12-01 → 2017-12-21 (+20d) |  | resources 李文杰; 赵伟; 余泽伟; 陈启强 → 李文杰 [50%]; 赵伟 [50%]; 余泽伟 [50%]; 陈启强 [50%] |
| 88 | **项目控制** | 2017-12-25 → 2017-12-20 (-5d) | 2017-12-31 → 2017-12-24 (-7d) | 5d → 3.67d |  |
| 89 | **需求变更** | 2017-12-25 → 2017-12-20 (-5d) | 2017-12-29 → 2017-12-24 (-5d) |  |  |
| 90 | 撰写《需求变更文档》并提交 | 2017-12-01 → 2017-12-20 (+19d) | 2017-12-04 → 2017-12-20 (+16d) | 2d → 1d | resources 余泽伟; 陈启强 → 赵伟 [50%]; 陈启强 [30%] |
| 91 | 撰写《需求变更申请报告》并提交 | 2017-12-01 → 2017-12-21 (+20d) | 2017-12-04 → 2017-12-21 (+17d) | 2d → 1d | resources 李文杰; 陈启强 → 陈启强 [20%] |
| 92 | 撰写CCB章程 | 2017-12-01 → 2017-12-22 (+21d) | 2017-12-03 → 2017-12-24 (+21d) |  | resources 赵伟 → 赵伟 [30%] |
| 93 | **项目收尾** | 2018-01-01 → 2018-01-02 (+1d) | 2018-01-17 → 2018-01-18 (+1d) | 11.33d → 11.67d |  |
| 94 | 撰写《项目绩效评价》 |  |  |  | resources 余泽伟 [150%] → 余泽伟 [20%] |
| 95 | 撰写《系统设计与实现计划》 | 2018-01-01 → 2018-01-04 (+3d) | 2018-01-02 → 2018-01-05 (+3d) |  | resources 李文杰 [200%] → 赵伟 [30%] |
| 96 | 撰写《软件概要设计说明》 |  |  |  | resources 陈启强 → 陈启强 [30%] |
| 97 | 撰写《测试计划》 |  |  |  | resources 李文杰 [200%] → 赵伟 [30%] |
| 98 | 撰写《安装部署计划》 |  |  |  | resources 余泽伟 [150%] → 余泽伟 [30%] |
| 99 | 撰写《培训计划》 | 2018-01-06 → 2018-01-04 (-2d) | 2018-01-08 → 2018-01-06 (-2d) |  | resources 李文杰 → 赵伟 [20%] |
| 100 | 撰写《系统维护计划》 | 2018-01-09 → 2018-01-04 (-5d) | 2018-01-10 → 2018-01-05 (-5d) |  | resources 赵伟 → 陈启强 [40%] |
| 101 | 修改整理各类旧文档及PPT | 2018-01-11 → 2018-01-10 (-1d) | 2018-01-11 → 2018-01-10 (-1d) |  | resources 赵伟; 陈启强; 李文杰; 余泽伟 → 陈启强 [30%] |
| 102 | 撰写《项目总结报告》及PPT | 2018-01-12 → 2018-01-11 (-1d) |  | 0.5d → 1.67d | resources 陈启强 → 陈启强 [70%] |
| 103 | 修改《项目总结报告》 | 2018-01-13 → 2018-01-16 (+3d) | 2018-01-13 → 2018-01-16 (+3d) | 0.67d → 1d | resources 陈启强 [80%] → 陈启强 [30%]; 李文杰 [30%]; 余泽伟 [30%]; 赵伟 [30%] |
| 104 | 评审 | 2018-01-14 → 2018-01-18 (+4d) | 2018-01-14 → 2018-01-18 (+4d) | 0d → 0.5d |  |

## Version 3 (data date 2018-01-14, saved 2018-01-16)

Note of the change: 项目总结报告1.1.0 甘特图修改 安装部署计划 系统维护计划

Last finish 2018-01-18 → 2018-01-21 (+3d). Complete tasks 17 → 88.

Changed:

| ID | Task | Start | Finish | Complete | Total float |
| --- | --- | --- | --- | --- | --- |
| 1 | **项目启动** |  |  | 65% → 100% |  |
| 2 | 团队建立 |  | 2017-09-29 A | 67% → 100% |  |
| 4 | 软件安装 |  | 2017-10-07 A | 82% → 100% |  |
| 5 | 撰写《可行性研究报告》并进行初次提交 |  | 2017-10-08 A | 80% → 100% |  |
| 7 | 修改《可行性研究报告》 |  | 2017-10-13 A | 0% → 100% |  |
| 8 | 修改《项目开发设计》报告 |  | 2017-10-19 A | 0% → 100% |  |
| 10 | **项目规划** |  | 2018-01-05 A | 54% → 100% |  |
| 11 | 撰写WBS图、OBS图、gantt图 |  | 2017-10-13 A | 36% → 100% |  |
| 16 | UML概述ppt制作 | 2017-11-06 A | 2017-11-09 A | 0% → 100% |  |
| 18 | 例会 |  | 2017-09-29 A | 30% → 100% |  |
| 19 | 例会 |  | 2017-10-13 A | 30% → 100% |  |
| 20 | 例会 |  | 2017-10-20 A | 30% → 100% |  |
| 21 | 例会 |  | 2017-10-27 A | 30% → 100% |  |
| 22 | 例会 |  | 2017-11-04 A | 30% → 100% |  |
| 23 | 例会 | 2017-11-10 A | 2017-11-10 A | 0% → 100% |  |
| 24 | 例会 | 2017-11-18 A | 2017-11-18 A | 0% → 100% |  |
| 25 | 例会 | 2017-11-24 A | 2017-11-24 A | 0% → 100% |  |
| 26 | 例会 | 2017-12-01 A | 2017-12-01 A | 0% → 100% |  |
| 27 | 例会 | 2017-12-08 A | 2017-12-09 A | 0% → 100% |  |
| 28 | 例会 | 2017-12-15 A | 2017-12-16 A | 0% → 100% |  |
| 29 | 例会 | 2017-12-22 A | 2017-12-23 A | 0% → 100% |  |
| 30 | 例会 | 2017-12-29 A | 2017-12-30 A | 0% → 100% |  |
| 31 | 例会 | 2018-01-05 A | 2018-01-05 A | 0% → 100% |  |
| 36 | **修改《需求工程项目计划》** |  | 2017-10-26 A | 46% → 100% |  |
| 37 | 修改《成本管理计划》 |  | 2017-10-26 A | 46% → 100% |  |
| 38 | 修改《风险管理计划》 |  | 2017-10-26 A | 46% → 100% |  |
| 39 | 修改《范围管理计划》 |  | 2017-10-26 A | 46% → 100% |  |
| 40 | 修改《质量管理计划》 |  | 2017-10-26 A | 46% → 100% |  |
| 41 | 修改《人力资源管理计划》 |  | 2017-10-26 A | 46% → 100% |  |
| 42 | **项目执行** |  |  | 10% → 99% |  |
| 44 | 修改《需求工程项目计划》 |  | 2017-11-07 A | 36% → 100% |  |
| 46 | **需求获取** | 2017-11-05 A |  | 0% → 99% |  |
| 47 | 草拟《前景与范围》 | 2017-11-05 A | 2017-11-07 A | 0% → 100% |  |
| 48 | 第一次访谈客户代表 | 2017-11-13 A | 2017-11-13 A | 0% → 100% |  |
| 49 | 界面原型设计-初步 | 2017-11-14 A | 2017-11-19 A | 0% → 100% |  |
| 50 | 第一次访谈教师代表 | 2017-11-20 A | 2017-11-20 A | 0% → 100% |  |
| 51 | 修改界面原型 | 2017-11-25 A |  | 0% → 99% |  |
| 52 | 第一次访谈管理员代表 | 2017-11-28 A | 2017-11-28 A | 0% → 100% |  |
| 53 | 第二次访谈教师代表 | 2017-12-01 A | 2017-12-01 A | 0% → 100% |  |
| 54 | 第一次访谈学生代表 | 2017-12-02 A | 2017-12-02 A | 0% → 100% |  |
| 55 | 修改界面原型 | 2017-12-02 A | 2017-12-03 A | 0% → 100% |  |
| 56 | **需求分析** |  |  | 9% → 100% |  |
| 61 | **撰写用例文档** |  | 2017-11-26 A | 0% → 100% |  |
| 62 | 撰写《教师用例文档》 | 2017-11-23 A | 2017-11-26 A | 0% → 100% |  |
| 63 | 撰写《学生用例文档》 | 2017-11-23 A | 2017-11-26 A | 0% → 100% |  |
| 64 | 撰写《管理员用例文档》 | 2017-11-23 A | 2017-11-26 A | 0% → 100% |  |
| 65 | 撰写《游客用例文档》 | 2017-11-23 A | 2017-11-26 A | 0% → 100% |  |
| 66 | 《前景与范围文档》修改 | 2017-11-14 A | 2017-11-15 A | 0% → 100% |  |
| 67 | 撰写《数据字典》 | 2017-11-23 A | 2017-11-25 A | 0% → 100% |  |
| 68 | 提交《用例与用例文档》、界面原型、《前景与范围》、《用户群分类》 | 2017-11-26 A | 2017-11-26 A | 0% → 100% |  |
| 69 | 修改《教师用例文档》 | 2017-11-28 A | 2017-11-29 A | 0% → 100% |  |
| 70 | 修改《管理员用例文档》 | 2017-11-28 A | 2017-11-28 A | 0% → 100% |  |
| 71 | 草拟需求规格说明书 | 2017-11-30 A | 2017-12-03 A | 0% → 100% |  |
| 72 | **撰写优先级排序表** |  | 2017-12-02 A | 0% → 100% |  |
| 73 | 撰写《教师优先级打分表》 | 2017-12-02 A | 2017-12-02 A | 0% → 100% |  |
| 74 | 撰写《学生优先级打分表》 | 2017-11-02 A | 2017-11-02 A | 0% → 100% |  |
| 75 | 撰写《管理员优先级打分表》 | 2017-11-02 A | 2017-11-02 A | 0% → 100% |  |
| 76 | 修改数据字典 |  | 2017-11-30 A | 90% → 100% |  |
| 77 | 提交《用例与用例文档》、界面原型、ER图、《需求规格说明书》 | 2017-12-03 A | 2017-12-03 A | 0% → 100% |  |
| 78 | 修改《软件需求规格说明书》 | 2017-12-04 A | 2017-12-05 A | 0% → 100% |  |
| 79 | **编写测试用例** | 2017-11-28 A | 2017-11-29 A | 0% → 100% | 0d → none |
| 80 | 修改《教师测试用例》 | 2017-11-28 A | 2017-11-29 A | 0% → 100% |  |
| 81 | 编写《学生测试用例》 | 2017-11-28 A | 2017-11-28 A | 0% → 100% |  |
| 82 | 编写《管理员测试用例》 | 2017-11-28 A | 2017-11-28 A | 0% → 100% |  |
| 83 | 撰写《软件用户手册》 | 2017-12-07 A | 2017-12-10 A | 0% → 100% |  |
| 84 | 修改《软件用户手册》 | 2017-12-15 A | 2017-12-15 A | 0% → 100% |  |
| 85 | SRS评审 | 2017-12-10 A | 2017-12-14 A | 0% → 100% |  |
| 86 | 修改《软件需求规格说明书》 | 2017-12-15 A | 2017-12-16 A | 0% → 100% |  |
| 87 | JAD会议 | 2017-12-21 A | 2017-12-21 A | 0% → 100% |  |
| 88 | **项目控制** |  |  | 0% → 100% |  |

| ID | Task | Start | Finish | Complete | Predecessors | Other |
| --- | --- | --- | --- | --- | --- | --- |
| 89 | **需求变更** |  |  | 0% → 100% |  |  |
| 90 | 撰写《需求变更文档》并提交 | 2017-12-20 → 2017-12-29 A (+9d) | 2017-12-20 → 2017-12-30 A (+10d) | 0% → 100% |  |  |
| 91 | 撰写《需求变更申请报告》并提交 | 2017-12-21 → 2017-12-30 A (+9d) | 2017-12-21 → 2017-12-31 A (+10d) | 0% → 100% |  |  |
| 92 | 撰写CCB章程 | 2017-12-22 → 2018-01-01 A (+10d) | 2017-12-24 → 2018-01-03 A (+10d) | 0% → 100% |  |  |
| 93 | **项目收尾** |  |  | 0% → 90% | 42 → 92 |  |
| 94 | 撰写《项目绩效评价》 | 2018-01-02 A | 2018-01-03 A | 0% → 100% |  |  |
| 95 | 撰写《系统设计与实现计划》 | 2018-01-04 → 2017-12-31 A (-4d) | 2018-01-05 → 2017-12-31 A (-5d) | 0% → 100% |  | resources 赵伟 [30%] → 陈启强 [30%] |
| 96 | 撰写《软件概要设计说明》 | 2018-01-04 → 2018-01-18 A (+14d) | 2018-01-07 → 2018-01-21 A (+14d) | 0% → 100% |  |  |
| 97 | 撰写《测试计划》 | 2018-01-04 A | 2018-01-05 A | 0% → 100% |  |  |
| 98 | 撰写《安装部署计划》 | 2018-01-04 A | 2018-01-07 A | 0% → 100% |  |  |
| 99 | 撰写《培训计划》 | 2018-01-04 A | 2018-01-06 A | 0% → 100% |  |  |
| 100 | 撰写《系统维护计划》 | 2018-01-04 A | 2018-01-05 A | 0% → 100% |  |  |
| 101 | 修改整理各类旧文档及PPT | 2018-01-10 A | 2018-01-10 A | 0% → 100% |  |  |
| 102 | 撰写《项目总结报告》及PPT | 2018-01-11 A | 2018-01-12 A | 0% → 100% |  |  |
