# 甘特图

How a schedule from MS Project changed from version to version. A marks actual dates.

## Version 1 (saved 2017-10-21, file 甘特图.mpp)

Note of the change: 可行性报告、项目开发计划、会议记录10.20、甘特图

| ID | WBS | Task | Duration | Start | Finish | Predecessors | Constraint |
| --- | --- | --- | --- | --- | --- | --- | --- |
| 1 | 11 | **项目启动** | 24d | 2017-09-28 | 2017-10-21 |  |  |
| 2 |  | 团队建立 | 1d | 2017-09-28 | 2017-09-28 |  |  |
| 3 |  | 搜集文档模板 | 1d | 2017-09-28 | 2017-09-28 | 2 |  |
| 4 |  | 软件安装 | 9d | 2017-09-29 | 2017-10-07 | 3 |  |
| 5 |  | 撰写《可行性研究报告》及PPT | 6d | 2017-10-09 | 2017-10-14 | 3 | start no earlier than 2017-10-09 |
| 6 |  | 提交《可行性研究报告》及PPT | 1d | 2017-10-15 | 2017-10-15 | 5 |  |
| 7 |  | 修改《可行性研究报告》及PPT | 6d | 2017-10-16 | 2017-10-21 | 6 | start no earlier than 2017-10-16 |
| 8 | 12 | **项目规划** | 27d | 2017-10-17 | 2017-11-12 | 1 |  |
| 9 |  | 撰写项目章程 | 3d | 2017-10-20 | 2017-10-22 |  | start no earlier than 2017-10-20 |
| 10 |  | 撰写项目总体计划 | 3d | 2017-10-20 | 2017-10-22 |  | start no earlier than 2017-10-20 |
| 11 |  | UM概述1演示文档制作 | 8d | 2017-10-22 | 2017-10-29 |  |  |
| 12 |  | 提交《项目章程》 | 1d | 2017-10-22 | 2017-10-22 | 9 |  |
| 13 |  | 提交《项目总体计划》 | 1d | 2017-10-22 | 2017-10-22 | 10 |  |
| 14 |  | 修改《项目总体计划》 | 4d | 2017-10-25 | 2017-10-28 | 10 |  |
| 15 |  | UML2.0演示文档制作 | 3d | 2017-10-27 | 2017-10-29 |  |  |
| 16 |  | 撰写《QA计划》 | 3d | 2017-10-27 | 2017-10-29 | 17 |  |
| 17 |  | 修改《项目章程》 | 3d | 2017-10-27 | 2017-10-29 |  |  |
| 18 |  | 提交《QA计划》和项目各类修改文档 | 1d | 2017-10-29 | 2017-10-29 | 16 |  |
| 19 |  | 修改《项目章程》 | 1d | 2017-11-01 | 2017-11-01 | 17 |  |
| 20 |  | 修改《需求工程项目计划》 | 5d | 2017-11-01 | 2017-11-05 |  |  |
| 21 |  | 提交《需求工程项目计划》 | 1d | 2017-11-05 | 2017-11-05 |  |  |
| 22 | 13 | **项目执行** | 57d | 2017-11-07 | 2018-01-02 | 8 |  |
| 23 |  | 修改《需求工程项目计划》 | 6d | 2017-11-07 | 2017-11-12 | 21 |  |
| 24 |  | 撰写开发过程WBS图 | 2d | 2017-11-09 | 2017-11-10 |  | start no earlier than 2017-11-09 |
| 25 |  | 《需求工程项目计划》评审 | 1d | 2017-11-13 | 2017-11-13 | 23 | start no earlier than 2017-11-13 |
| 26 |  | 修改《需求工程项目计划》 | 1d | 2017-11-13 | 2017-11-13 | 25 |  |
| 27 | 13.2 | **需求分析** | 44d | 2017-11-10 | 2017-12-23 |  |  |
| 28 | 3.5.1 | **撰写《用户代表确认文档》** | 2d | 2017-11-14 | 2017-11-15 |  |  |
| 29 |  | 撰写《教师代表确认文档》 | 1d | 2017-11-15 | 2017-11-15 |  |  |
| 30 |  | 撰写《学生代表确认文档》 | 1d | 2017-11-15 | 2017-11-15 |  |  |
| 31 |  | 撰写《管理员代表确认文档》 | 1d | 2017-11-15 | 2017-11-15 |  |  |
| 32 |  | 界面原型设计-初步 | 3d | 2017-11-17 | 2017-11-19 | 28 |  |
| 33 | 3.5.3 | **撰写用例文档** | 5.5d | 2017-11-17 | 2017-11-22 | 32 |  |
| 34 |  | 撰写《教师用例文档》 | 3d | 2017-11-17 | 2017-11-19 |  |  |
| 35 |  | 撰写《学生用例文档》 | 3d | 2017-11-17 | 2017-11-19 |  |  |
| 36 |  | 撰写《管理员用例文档》 | 3d | 2017-11-17 | 2017-11-19 |  |  |
| 37 |  | 撰写《游客用例文档》 | 3d | 2017-11-19 | 2017-11-21 |  |  |
| 38 |  | 《前景与范围文档》修改 | 1d | 2017-11-20 | 2017-11-20 |  |  |
| 39 |  | 提交《用例与用例文档》、界面原型、《前景与范围》、《用户群分类》 | 1d | 2017-11-20 | 2017-11-20 | 28, 32 |  |
| 40 |  | 修改《学生用例文档》 | 3d | 2017-11-22 | 2017-11-24 | 39 |  |
| 41 |  | 第一次访谈客户代表 | 0.5d | 2017-11-26 | 2017-11-26 | 39 |  |
| 42 |  | 第一次访谈教师代表 | 1d | 2017-11-26 | 2017-11-26 | 39 |  |
| 43 |  | 修改界面原型 | 2d | 2017-11-26 | 2017-11-27 |  |  |
| 44 |  | 修改《教师用例文档》 | 2d | 2017-11-26 | 2017-11-27 |  |  |
| 45 |  | 修改《学生用例文档》 | 3d | 2017-12-01 | 2017-12-03 | 42 |  |
| 46 |  | 撰写《数据字典》 | 1d | 2017-12-03 | 2017-12-03 | 42 |  |
| 47 |  | 提交《用例与用例文档》、界面原型、ER图、《需求规格说明书》 | 1d | 2017-12-04 | 2017-12-04 | 42 |  |
| 48 |  | 第二次访谈教师代表 | 1d | 2017-12-05 | 2017-12-05 | 42 |  |
| 49 |  | 修改界面原型 | 2d | 2017-12-06 | 2017-12-07 | 48 |  |
| 50 |  | 修改《教师用例文档》 | 1d | 2017-12-05 | 2017-12-05 |  |  |
| 51 |  | 修改数据字典 | 3d | 2017-12-05 | 2017-12-07 |  |  |
| 52 |  | 撰写《软件用户手册》 | 1d | 2017-12-07 | 2017-12-07 | 39 |  |
| 53 |  | 草拟需求规格说明书 | 3d | 2017-12-09 | 2017-12-11 | 39 |  |
| 54 |  | 修改《教师用例文档》 | 2d | 2017-12-09 | 2017-12-10 | 44 |  |
| 55 |  | 修改《学生用例文档》 | 1d | 2017-12-10 | 2017-12-10 | 45 |  |
| 56 |  | 修改《软件需求规格说明书》 | 2d | 2017-12-15 | 2017-12-16 |  |  |
| 57 |  | 修改《管理员用例文档》 | 1d | 2017-12-16 | 2017-12-16 |  |  |
| 58 |  | 修改《教师用例文档》 | 1d | 2017-12-16 | 2017-12-16 | 54 |  |
| 59 |  | 修改《教师测试用例》 | 1d | 2017-12-16 | 2017-12-16 |  |  |
| 60 |  | 修改数据字典 | 2d | 2017-12-15 | 2017-12-16 | 51 |  |
| 61 |  | 修改《软件用户手册》 | 1d | 2017-12-18 | 2017-12-18 |  |  |
| 62 |  | 提交修改《软件需求规格说明书》、对话框图、数据流图 | 1d | 2017-12-18 | 2017-12-18 |  |  |
| 63 |  | 修改《软件需求规格说明书》 | 2d | 2017-12-20 | 2017-12-21 | 56 |  |
| 64 |  | JAD会议 | 1d | 2017-12-21 | 2017-12-21 | 53 |  |
| 65 | 178 | **项目控制** | 20d | 2017-12-19 | 2018-01-07 |  |  |
| 66 | 178.1 | **需求变更** | 10d | 2017-12-19 | 2017-12-28 |  |  |
| 67 |  | 撰写《需求变更文档》 | 3d | 2017-12-20 | 2017-12-22 |  |  |
| 68 |  | 撰写《需求变更申请报告》 | 3d | 2017-12-23 | 2017-12-25 |  |  |
| 69 |  | 撰写《CCB章程》 | 3d | 2017-12-26 | 2017-12-28 | 67 |  |
| 70 | 179 | **项目收尾** | 17d | 2017-12-29 | 2018-01-14 | 65 |  |

| ID | Task | Duration | Start | Finish | Predecessors |
| --- | --- | --- | --- | --- | --- |
| 71 | 撰写《项目绩效评价》 | 2d | 2017-12-29 | 2017-12-30 |  |
| 72 | 安装部署计划 | 4d | 2017-12-31 | 2018-01-03 |  |
| 73 | Requisitepro数据导入导出 | 3d | 2018-01-02 | 2018-01-04 |  |
| 74 | 测试计划 | 3d | 2018-01-03 | 2018-01-05 |  |
| 75 | 培训计划 | 2d | 2018-01-06 | 2018-01-07 |  |
| 76 | 系统维护计划 | 2d | 2018-01-08 | 2018-01-09 |  |
| 77 | 《系统设计与实现计划》 | 1d | 2018-01-10 | 2018-01-10 |  |
| 78 | 修改整理各类旧文档及PPT | 1d | 2018-01-11 | 2018-01-11 |  |
| 79 | 撰写《项目总结报告》及PPT | 1d | 2018-01-12 | 2018-01-12 |  |
| 80 | 修改《项目总结报告》 | 1d | 2018-01-13 | 2018-01-13 | 79 |
| 81 | 评审 | 0d | 2018-01-14 | 2018-01-14 | 80 |

## Version 2 (saved 2017-10-25, file 甘特图.mpp)

Note of the change: 甘特图修改及项目开发计划ppt

Last finish stays 2018-01-14.

Added:

| ID | Task | Duration | Start | Finish | Predecessors | Resources |
| --- | --- | --- | --- | --- | --- | --- |
| 6 | 撰写《项目开发设计》报告并进行初次提交 | 6d | 2017-10-02 | 2017-10-07 | 3 | 陈启强 |
| 8 | 修改《项目开发设计》报告 | 7d | 2017-10-08 | 2017-10-14 | 6 | 李文杰 |
| 9 | 提交《可行性研究报告》与《项目开发设计》报告 | 1d | 2017-10-20 | 2017-10-20 | 7 | 陈启强 [5%] |
| 13 | 撰写《需求工程计划--初步》并提交 | 5d | 2017-10-23 | 2017-10-27 |  | 赵伟 |
| 69 | 撰写《软件概要设计说明》 | 4d | 2017-10-10 | 2017-10-13 |  |  |

Removed: 6 提交《可行性研究报告》及PPT; 12 提交《项目章程》; 14 修改《项目总体计划》; 15 UML2.0演示文档制作; 17 修改《项目章程》; 19 修改《项目章程》; 23 修改《需求工程项目计划》; 69 撰写《CCB章程》; 73 Requisitepro数据导入导出

Changed:

| ID | Task | Start | Finish | Duration | Predecessors | Other |
| --- | --- | --- | --- | --- | --- | --- |
| 1 | **项目启动** |  | 2017-10-21 → 2017-10-20 (-1d) | 24d → 23d |  |  |
| 2 | 团队建立 |  |  |  |  | resources 李文杰 [50%]; 余泽伟 [50%]; 赵伟 [50%]; 陈启强 [50%]; 周伟 [50%] → 李文杰 [50%]; 余泽伟 [50%]; 赵伟 [50%]; 陈启强 [50%] |
| 3 | 搜集文档模板并确定模版标准 | 2017-09-28 → 2017-09-29 (+1d) | 2017-09-28 → 2017-10-01 (+3d) | 1d → 3d |  | was named 搜集文档模板; resources 周伟 [50%]; 李文杰 [50%]; 赵伟 [50%]; 余泽伟 [50%]; 陈启强 [50%] → 李文杰 [50%]; 赵伟 [50%]; 余泽伟 [50%]; 陈启强 [50%] |
| 4 | 软件安装 | 2017-09-29 → 2017-10-03 (+4d) |  | 9d → 5d |  | resources 李文杰 [20%]; 余泽伟 [20%]; 赵伟 [20%]; 陈启强 [20%]; 周伟 [20%] → 李文杰 [20%]; 余泽伟 [20%]; 赵伟 [20%]; 陈启强 [20%] |
| 5 | 撰写《可行性研究报告》并进行初次提交 | 2017-10-09 → 2017-10-02 (-7d) | 2017-10-14 → 2017-10-07 (-7d) |  |  | was named 撰写《可行性研究报告》及PPT; constraint start no earlier than 2017-10-09 → start no earlier than 2017-10-08 |
| 7 | 修改《可行性研究报告》 | 2017-10-16 → 2017-10-08 (-8d) | 2017-10-21 → 2017-10-14 (-7d) | 6d → 7d | 提交《可行性研究报告》及PPT → 5 | was named 修改《可行性研究报告》及PPT; constraint start no earlier than 2017-10-16 → start no earlier than 2017-10-13; resources 余泽伟 [80%]; 赵伟; 周伟 → 余泽伟 [80%] |
| 10 | **项目规划** | 2017-10-17 → 2017-10-20 (+3d) | 2017-11-12 → 2017-11-03 (-9d) | 27d → 15d |  |  |
| 11 | 撰写《项目章程》 |  | 2017-10-22 → 2017-10-24 (+2d) | 3d → 5d |  | was named 撰写项目章程; resources 赵伟 [200%] → 余泽伟 |
| 12 | 撰写《项目总体计划》 | 2017-10-20 → 2017-10-23 (+3d) | 2017-10-22 → 2017-10-27 (+5d) | 3d → 5d |  | was named 撰写项目总体计划; constraint start no earlier than 2017-10-20 → start no earlier than 2017-10-23; resources 周伟 [200%] → 李文杰 [200%] |
| 14 | UM概述ppt制作 | 2017-10-22 → 2017-10-25 (+3d) | 2017-10-29 → 2017-10-28 (-1d) | 8d → 4d |  | was named UM概述1演示文档制作; resources 赵伟 → 余泽伟 |
| 15 | 撰写WBS图、OBS图、gantt图 | 2017-11-09 → 2017-10-23 (-17d) | 2017-11-10 → 2017-10-24 (-17d) |  |  | was named 撰写开发过程WBS图; constraint start no earlier than 2017-11-09 → start no earlier than 2017-10-23; resources 李文杰 → 李文杰; 陈启强; 余泽伟 |
| 16 | 提交《项目章程》、《项目总体计划》 | 2017-10-22 → 2017-10-25 (+3d) | 2017-10-22 → 2017-10-25 (+3d) |  | 12 → 12, 11 | was named 提交《项目总体计划》 |
| 17 | 撰写《QA计划》 | 2017-10-27 → 2017-10-30 (+3d) | 2017-10-29 → 2017-11-03 (+5d) | 3d → 5d | 修改《项目章程》 → 16 | resources 周伟 → 李文杰 |
| 18 | 提交《QA计划》和项目各类修改文档 | 2017-10-29 → 2017-11-03 (+5d) | 2017-10-29 → 2017-11-03 (+5d) |  |  |  |
| 19 | 修改《需求工程项目计划》 | 2017-11-01 → 2017-10-28 (-4d) | 2017-11-05 → 2017-11-03 (-2d) | 5d → 7d | none → 13 | resources 余泽伟 → 余泽伟; 陈启强; 李文杰; 赵伟 |
| 20 | **项目执行** | 2017-11-07 → 2017-11-05 (-2d) | 2018-01-02 → 2017-12-26 (-7d) | 57d → 52d |  |  |
| 21 | 《需求工程项目计划》评审 | 2017-11-13 → 2017-11-06 (-7d) | 2017-11-13 → 2017-11-09 (-4d) | 1d → 4d | 修改《需求工程项目计划》 → 19 | constraint start no earlier than 2017-11-13 → start no earlier than 2017-11-06; resources 李文杰; 余泽伟; 赵伟; 陈启强; 周伟 → 李文杰; 余泽伟; 赵伟; 陈启强 |
| 22 | 修改《需求工程项目计划》 | 2017-11-13 → 2017-11-10 (-3d) | 2017-11-13 → 2017-11-11 (-2d) | 1d → 2d |  |  |
| 23 | 提交《需求工程项目计划》 | 2017-11-05 → 2017-11-12 (+7d) | 2017-11-05 → 2017-11-12 (+7d) |  | none → 22 |  |
| 24 | **需求分析** | 2017-11-10 → 2017-11-13 (+3d) | 2017-12-23 → 2017-12-26 (+3d) |  |  |  |
| 29 | 界面原型设计-初步 |  |  |  |  | resources 周伟 [200%] → 陈启强; 李文杰; 余泽伟; 赵伟 |
| 35 | 《前景与范围文档》修改 |  |  |  |  | resources 周伟 [80%] → none |
| 38 | 第一次访谈客户代表 |  |  |  |  | resources 周伟; 李文杰; 赵伟; 余泽伟; 陈启强 → 李文杰; 赵伟; 余泽伟; 陈启强 |
| 39 | 第一次访谈教师代表 |  |  |  |  | resources 周伟; 李文杰; 赵伟; 余泽伟; 陈启强 → 李文杰; 赵伟; 余泽伟; 陈启强 |
| 40 | 修改界面原型 |  |  |  |  | resources 周伟 [200%] → none |
| 45 | 第二次访谈教师代表 |  |  |  |  | resources 周伟; 李文杰; 赵伟; 余泽伟; 陈启强 → 李文杰; 赵伟; 余泽伟; 陈启强 |
| 46 | 修改界面原型 |  |  |  |  | resources 周伟 [200%] → none |
| 49 | 撰写《软件用户手册》 |  |  |  |  | resources 周伟 [150%] → none |
| 58 | 修改《软件用户手册》 |  |  |  |  | resources 周伟 [80%] → none |
| 61 | JAD会议 |  |  |  |  | resources 周伟; 李文杰; 赵伟; 余泽伟; 陈启强 → 李文杰; 赵伟; 余泽伟; 陈启强 |
| 64 | 撰写《需求变更文档》并提交 |  |  |  |  | was named 撰写《需求变更文档》 |
| 65 | 撰写《需求变更申请报告》并提交 |  |  |  |  | was named 撰写《需求变更申请报告》 |
| 68 | 撰写《系统设计与实现计划》 |  |  |  |  | was named 《系统设计与实现计划》 |
| 70 | 撰写《测试计划》 |  |  |  |  | was named 测试计划 |
| 71 | 撰写《安装部署计划》 |  |  |  |  | was named 安装部署计划 |
| 72 | 撰写《培训计划》 |  |  |  |  | was named 培训计划; resources 周伟 [150%] → none |
| 73 | 撰写《系统维护计划》 |  |  |  |  | was named 系统维护计划; resources 周伟 [200%] → none |
| 74 | 修改整理各类旧文档及PPT |  |  |  |  | resources 赵伟; 陈启强; 李文杰; 余泽伟; 周伟 → 赵伟; 陈启强; 李文杰; 余泽伟 |
| 77 | 评审 |  |  |  |  | resources 李文杰; 余泽伟; 赵伟; 陈启强; 周伟 → 李文杰; 余泽伟; 赵伟; 陈启强 |

## Version 3 (saved 2017-10-29, file 甘特图.mpp)

Note of the change: 甘特图修改、项目开发计划、项目开发计划ppt

Last finish stays 2018-01-14.

Added:

| ID | Task | Duration | Start | Finish | Resources |
| --- | --- | --- | --- | --- | --- |
| 14 | UML概述ppt制作 | 2.67d | 2017-10-25 19:00 | 2017-10-28 21:00 | 余泽伟 |
| 15 | UML概述ppt制作 | 2.67d | 2017-10-25 19:00 | 2017-10-28 21:00 | 赵伟 |
| 16 | UML概述ppt制作 | 2.67d | 2017-10-25 19:00 | 2017-10-28 21:00 | 余泽伟 |
| 22 | **修改《需求工程项目计划》** | 4d | 2016-11-01 19:00 | 2016-11-06 21:00 |  |
| 23 | 修改《成本管理计划》 | 2d | 2016-11-01 19:00 | 2016-11-03 21:00 | 赵伟 |
| 24 | 修改《风险管理计划》 | 2d | 2016-11-01 19:00 | 2016-11-03 21:00 | 赵伟 |
| 25 | 修改《范围管理计划》 | 2d | 2016-11-03 19:00 | 2016-11-05 21:00 | 余泽伟 |
| 26 | 修改《质量管理计划》 | 2d | 2016-11-03 19:00 | 2016-11-05 21:00 | 赵伟 |
| 27 | 修改《人力资源管理计划》 | 2d | 2016-11-04 19:00 | 2016-11-06 21:00 | 陈启强; 李文杰; 余泽伟; 赵伟 |

Removed: 14 UM概述ppt制作

Changed:

| ID | Task | Start | Finish | Duration | Predecessors | Other |
| --- | --- | --- | --- | --- | --- | --- |
| 1 | **项目启动** | 2017-09-28 → 2017-09-28 19:00 | 2017-10-20 → 2017-10-20 21:00 | 23d → 15.33d |  |  |
| 2 | 团队建立 | 2017-09-28 → 2017-09-28 19:00 | 2017-09-28 → 2017-09-28 21:00 | 1d → 0.67d |  |  |
| 3 | 搜集文档模板并确定模版标准 | 2017-09-29 → 2017-09-29 19:00 | 2017-10-01 → 2017-10-01 21:00 | 3d → 2d |  |  |
| 4 | 软件安装 | 2017-10-03 → 2017-10-02 19:00 (-1d) | 2017-10-07 → 2017-10-06 21:00 (-1d) | 5d → 3.33d |  |  |
| 5 | 撰写《可行性研究报告》并进行初次提交 | 2017-10-02 → 2017-10-02 19:00 | 2017-10-07 → 2017-10-07 21:00 | 6d → 4d |  | constraint start no earlier than 2017-10-08 → start no earlier than 2017-10-08 19:00 |
| 6 | 撰写《项目开发设计》报告并进行初次提交 | 2017-10-02 → 2017-10-08 19:00 (+6d) | 2017-10-07 → 2017-10-13 21:00 (+6d) | 6d → 4d | 3 → 2, 3, 4, 5 |  |
| 7 | 修改《可行性研究报告》 | 2017-10-08 → 2017-10-08 19:00 | 2017-10-14 → 2017-10-14 21:00 | 7d → 4.67d |  | constraint start no earlier than 2017-10-13 → start no earlier than 2017-10-13 19:00 |
| 8 | 修改《项目开发设计》报告 | 2017-10-08 → 2017-10-08 19:00 | 2017-10-14 → 2017-10-14 21:00 | 7d → 4.67d | 6 → none | resources 李文杰 → 陈启强 |
| 9 | 提交《可行性研究报告》与《项目开发设计》报告 | 2017-10-20 → 2017-10-20 19:00 | 2017-10-20 → 2017-10-20 21:00 | 1d → 0.67d |  |  |
| 10 | **项目规划** | 2017-10-20 → 2017-10-20 19:00 | 2017-11-03 → 2017-11-03 21:00 | 15d → 10d |  |  |
| 11 | 撰写《项目章程》 | 2017-10-20 → 2017-10-20 19:00 | 2017-10-24 → 2017-10-24 21:00 | 5d → 3.33d |  | constraint start no earlier than 2017-10-20 → start no earlier than 2017-10-20 19:00 |
| 12 | 撰写《项目总体计划》 | 2017-10-23 → 2017-10-23 19:00 | 2017-10-27 → 2017-10-27 21:00 | 5d → 3.33d |  | constraint start no earlier than 2017-10-23 → start no earlier than 2017-10-23 19:00 |
| 13 | 撰写《需求工程计划--初步》并提交 | 2017-10-23 → 2017-10-23 19:00 | 2017-10-27 → 2017-10-27 21:00 | 5d → 3.33d |  |  |
| 17 | 撰写WBS图、OBS图、gantt图 | 2017-10-23 → 2017-10-23 19:00 | 2017-10-24 → 2017-10-24 21:00 | 2d → 1.33d |  | constraint start no earlier than 2017-10-23 → start no earlier than 2017-10-23 19:00 |
| 18 | 提交《项目章程》、《项目总体计划》 | 2017-10-25 → 2017-10-25 19:00 | 2017-10-25 → 2017-10-25 21:00 | 1d → 0.67d |  |  |
| 19 | 撰写《QA计划》 | 2017-10-30 → 2017-10-30 19:00 | 2017-11-03 → 2017-11-03 21:00 | 5d → 3.33d |  |  |
| 20 | 提交《QA计划》和项目各类修改文档 | 2017-11-03 → 2017-11-03 19:00 | 2017-11-03 → 2017-11-03 21:00 | 1d → 0.67d |  |  |
| 21 | 修改《需求工程项目计划》 | 2017-10-28 → 2017-10-28 19:00 | 2017-11-03 → 2017-11-03 21:00 | 7d → 4.67d |  |  |
| 28 | **项目执行** | 2017-11-05 → 2017-11-05 19:00 | 2017-12-26 → 2017-12-26 21:00 | 52d → 34.67d |  |  |
| 29 | 《需求工程项目计划》评审 | 2017-11-06 → 2017-11-06 19:00 | 2017-11-09 → 2017-11-09 21:00 | 4d → 2.67d |  | constraint start no earlier than 2017-11-06 → start no earlier than 2017-11-06 19:00 |
| 30 | 修改《需求工程项目计划》 | 2017-11-10 → 2017-11-10 19:00 | 2017-11-11 → 2017-11-11 21:00 | 2d → 1.33d |  |  |
| 31 | 提交《需求工程项目计划》 | 2017-11-12 → 2017-11-12 19:00 | 2017-11-12 → 2017-11-12 21:00 | 1d → 0.67d |  | resources 陈启强 [5%] → 赵伟 [5%] |
| 32 | **需求分析** | 2017-11-13 → 2017-11-13 19:00 | 2017-12-26 → 2017-12-26 21:00 | 44d → 29.33d |  |  |
| 33 | **撰写《用户代表确认文档》** | 2017-11-14 → 2017-11-14 19:00 | 2017-11-15 → 2017-11-15 21:00 | 2d → 1.33d |  |  |
| 34 | 撰写《教师代表确认文档》 | 2017-11-15 → 2017-11-15 19:00 | 2017-11-15 → 2017-11-15 21:00 | 1d → 0.67d |  | resources 李文杰 [200%] → 李文杰 |
| 35 | 撰写《学生代表确认文档》 | 2017-11-15 → 2017-11-15 19:00 | 2017-11-15 → 2017-11-15 21:00 | 1d → 0.67d |  |  |
| 36 | 撰写《管理员代表确认文档》 | 2017-11-15 → 2017-11-15 19:00 | 2017-11-15 → 2017-11-15 21:00 | 1d → 0.67d |  |  |
| 37 | 界面原型设计-初步 | 2017-11-17 → 2017-11-17 19:00 | 2017-11-19 → 2017-11-19 21:00 | 3d → 2d |  | resources 陈启强; 李文杰; 余泽伟; 赵伟 → 陈启强 |
| 38 | **撰写用例文档** | 2017-11-17 → 2017-11-17 19:00 | 2017-11-22 → 2017-11-22 20:00 | 5.5d → 3.67d |  |  |
| 39 | 撰写《教师用例文档》 | 2017-11-17 → 2017-11-17 19:00 | 2017-11-19 → 2017-11-19 21:00 | 3d → 2d |  | resources 李文杰 [300%] → 李文杰 |
| 40 | 撰写《学生用例文档》 | 2017-11-17 → 2017-11-17 19:00 | 2017-11-19 → 2017-11-19 21:00 | 3d → 2d |  | resources 赵伟 [300%] → 赵伟 |
| 41 | 撰写《管理员用例文档》 | 2017-11-17 → 2017-11-17 19:00 | 2017-11-19 → 2017-11-19 21:00 | 3d → 2d |  | resources 余泽伟 [300%] → 余泽伟 |
| 42 | 撰写《游客用例文档》 | 2017-11-19 → 2017-11-19 19:00 | 2017-11-21 → 2017-11-21 21:00 | 3d → 2d |  | resources 陈启强 [80%] → 陈启强 |
| 43 | 《前景与范围文档》修改 | 2017-11-20 → 2017-11-20 19:00 | 2017-11-20 → 2017-11-20 21:00 | 1d → 0.67d |  | resources none → 陈启强 |
| 44 | 提交《用例与用例文档》、界面原型、《前景与范围》、《用户群分类》 | 2017-11-20 → 2017-11-20 19:00 | 2017-11-20 → 2017-11-20 21:00 | 1d → 0.67d |  |  |
| 45 | 修改《学生用例文档》 | 2017-11-22 → 2017-11-22 19:00 | 2017-11-24 → 2017-11-24 21:00 | 3d → 2d |  |  |
| 46 | 第一次访谈客户代表 | 2017-11-26 → 2017-11-26 19:00 | 2017-11-26 → 2017-11-26 20:00 | 0.5d → 0.33d |  |  |
| 47 | 第一次访谈教师代表 | 2017-11-26 → 2017-11-21 19:00 (-5d) | 2017-11-26 → 2017-11-21 21:00 (-5d) | 1d → 0.67d |  |  |
| 48 | 修改界面原型 | 2017-11-26 → 2017-11-26 19:00 | 2017-11-27 → 2017-11-27 21:00 | 2d → 1.33d |  | resources none → 陈启强 |
| 49 | 修改《教师用例文档》 | 2017-11-26 → 2017-11-26 19:00 | 2017-11-27 → 2017-11-27 21:00 | 2d → 1.33d |  | resources 李文杰 [80%] → 赵伟 [80%] |
| 50 | 修改《学生用例文档》 | 2017-12-01 → 2017-12-01 19:00 | 2017-12-03 → 2017-12-03 21:00 | 3d → 2d |  |  |
| 51 | 草拟需求规格说明书 | 2017-12-09 → 2017-12-01 19:00 (-8d) | 2017-12-11 → 2017-12-03 21:00 (-8d) | 3d → 2d |  |  |
| 52 | 撰写《数据字典》 | 2017-12-03 → 2017-12-03 19:00 | 2017-12-03 → 2017-12-03 21:00 | 1d → 0.67d |  |  |
| 53 | 提交《用例与用例文档》、界面原型、ER图、《需求规格说明书》 | 2017-12-04 → 2017-12-04 19:00 | 2017-12-04 → 2017-12-04 21:00 | 1d → 0.67d |  | resources 陈启强 [5%] → 陈启强 |
| 54 | 第二次访谈教师代表 | 2017-12-05 → 2017-12-05 19:00 | 2017-12-05 → 2017-12-05 21:00 | 1d → 0.67d |  |  |
| 55 | 修改界面原型 | 2017-12-06 → 2017-12-06 19:00 | 2017-12-07 → 2017-12-07 21:00 | 2d → 1.33d |  | resources none → 余泽伟 |
| 56 | 修改《教师用例文档》 | 2017-12-05 → 2017-12-05 19:00 | 2017-12-05 → 2017-12-05 21:00 | 1d → 0.67d |  |  |
| 57 | 修改数据字典 | 2017-12-05 → 2017-12-05 19:00 | 2017-12-07 → 2017-12-07 21:00 | 3d → 2d |  |  |
| 58 | 撰写《软件用户手册》 | 2017-12-07 → 2017-12-07 19:00 | 2017-12-07 → 2017-12-07 21:00 | 1d → 0.67d |  | resources none → 赵伟 |
| 59 | 修改《教师用例文档》 | 2017-12-09 → 2017-12-09 19:00 | 2017-12-10 → 2017-12-10 21:00 | 2d → 1.33d |  |  |
| 60 | 修改《学生用例文档》 | 2017-12-10 → 2017-12-10 19:00 | 2017-12-10 → 2017-12-10 21:00 | 1d → 0.67d |  |  |
| 61 | 修改《软件需求规格说明书》 | 2017-12-15 → 2017-12-15 19:00 | 2017-12-16 → 2017-12-16 21:00 | 2d → 1.33d |  |  |
| 62 | 修改《管理员用例文档》 | 2017-12-16 → 2017-12-16 19:00 | 2017-12-16 → 2017-12-16 21:00 | 1d → 0.67d |  |  |
| 63 | 修改《教师用例文档》 | 2017-12-16 → 2017-12-16 19:00 | 2017-12-16 → 2017-12-16 21:00 | 1d → 0.67d |  |  |
| 64 | 修改《教师测试用例》 | 2017-12-16 → 2017-12-16 19:00 | 2017-12-16 → 2017-12-16 21:00 | 1d → 0.67d |  |  |
| 65 | 修改数据字典 | 2017-12-15 → 2017-12-15 19:00 | 2017-12-16 → 2017-12-16 21:00 | 2d → 1.33d |  |  |
| 66 | 修改《软件用户手册》 | 2017-12-18 → 2017-12-18 19:00 | 2017-12-18 → 2017-12-18 21:00 | 1d → 0.67d |  | resources none → 李文杰 |
| 67 | 提交修改《软件需求规格说明书》、对话框图、数据流图 | 2017-12-18 → 2017-12-18 19:00 | 2017-12-18 → 2017-12-18 21:00 | 1d → 0.67d |  |  |
| 68 | 修改《软件需求规格说明书》 | 2017-12-20 → 2017-12-20 19:00 | 2017-12-21 → 2017-12-21 21:00 | 2d → 1.33d |  |  |
| 69 | JAD会议 | 2017-12-21 → 2017-12-21 19:00 | 2017-12-21 → 2017-12-21 21:00 | 1d → 0.67d |  |  |
| 70 | **项目控制** | 2017-12-19 → 2017-12-19 19:00 | 2018-01-07 → 2018-01-07 21:00 | 20d → 13.33d |  |  |
| 71 | **需求变更** | 2017-12-19 → 2017-12-19 19:00 | 2017-12-28 → 2017-12-28 21:00 | 10d → 6.67d |  |  |
| 72 | 撰写《需求变更文档》并提交 | 2017-12-20 → 2017-12-20 19:00 | 2017-12-22 → 2017-12-22 21:00 | 3d → 2d |  | resources 余泽伟 [150%] → 余泽伟 |
| 73 | 撰写《需求变更申请报告》并提交 | 2017-12-23 → 2017-12-23 19:00 | 2017-12-25 → 2017-12-25 21:00 | 3d → 2d |  |  |
| 74 | **项目收尾** | 2017-12-29 → 2017-12-29 19:00 | 2018-01-14 → 2018-01-14 21:00 | 17d → 11.33d |  |  |
| 75 | 撰写《项目绩效评价》 | 2017-12-29 → 2017-12-29 19:00 | 2017-12-30 → 2017-12-30 20:00 | 2d → 1d |  |  |
| 76 | 撰写《系统设计与实现计划》 | 2018-01-10 → 2018-01-10 19:00 | 2018-01-10 → 2018-01-11 20:00 (+1d) |  |  |  |
| 77 | 撰写《软件概要设计说明》 | 2017-10-10 → 2017-10-10 19:00 | 2017-10-13 → 2017-10-13 20:30 | 4d → 2.5d |  | resources none → 陈启强 |
| 78 | 撰写《测试计划》 | 2018-01-03 → 2018-01-03 19:00 | 2018-01-05 → 2018-01-05 19:30 | 3d → 1.5d |  |  |
| 79 | 撰写《安装部署计划》 | 2017-12-31 → 2017-12-31 19:00 | 2018-01-03 → 2018-01-03 20:30 | 4d → 2.5d |  |  |

| ID | Task | Start | Finish | Duration | Predecessors | Other |
| --- | --- | --- | --- | --- | --- | --- |
| 80 | 撰写《培训计划》 | 2018-01-06 → 2018-01-06 19:00 | 2018-01-07 → 2018-01-08 21:00 (+1d) |  |  | resources none → 李文杰 |
| 81 | 撰写《系统维护计划》 | 2018-01-08 → 2018-01-08 19:00 | 2018-01-09 → 2018-01-10 19:30 (+1d) | 2d → 1.5d |  | resources none → 赵伟 |
| 82 | 修改整理各类旧文档及PPT | 2018-01-11 → 2018-01-11 19:00 | 2018-01-11 → 2018-01-11 20:30 | 1d → 0.5d |  |  |
| 83 | 撰写《项目总结报告》及PPT | 2018-01-12 → 2018-01-12 19:00 | 2018-01-12 → 2018-01-12 20:30 | 1d → 0.5d |  |  |
| 84 | 修改《项目总结报告》 | 2018-01-13 → 2018-01-13 19:00 | 2018-01-13 → 2018-01-13 21:00 | 1d → 0.67d |  |  |
| 85 | 评审 | 2018-01-14 → 2018-01-14 19:00 | 2018-01-14 → 2018-01-14 19:00 |  | 84 → none | resources 李文杰; 余泽伟; 赵伟; 陈启强 → 陈启强; 李文杰; 余泽伟; 赵伟 |

## Version 4 (saved 2017-11-03, file 甘特图.mpp)

Note of the change: 需求项目计划obs图、甘特图修改

Last finish 2018-01-14 → 2018-01-17 (+3d).

Added:

| ID | Task | Duration | Start | Finish | Predecessors | Resources |
| --- | --- | --- | --- | --- | --- | --- |
| 74 | 撰写CCB章程 | 1.67d | 2017-12-01 20:00 | 2017-12-03 21:00 | 67 | 赵伟 |

Changed:

| ID | Task | Start | Finish | Duration | Predecessors | Other |
| --- | --- | --- | --- | --- | --- | --- |
| 8 | 修改《项目开发设计》报告 | 2017-10-08 19:00 → 2017-10-14 19:00 (+6d) | 2017-10-14 21:00 → 2017-10-20 21:00 (+6d) |  | none → 6 |  |
| 9 | 提交《可行性研究报告》与《项目开发设计》报告 | 2017-10-20 19:00 → 2017-10-15 19:00 (-5d) | 2017-10-20 21:00 → 2017-10-15 21:00 (-5d) |  |  |  |
| 11 | 撰写《项目章程》 | 2017-10-20 19:00 → 2017-10-16 19:00 (-4d) | 2017-10-24 21:00 → 2017-10-20 21:00 (-4d) |  | none → 9 |  |
| 12 | 撰写《项目总体计划》 | 2017-10-23 19:00 → 2017-10-16 19:00 (-7d) | 2017-10-27 21:00 → 2017-10-20 21:00 (-7d) |  | none → 9 |  |
| 13 | 撰写《需求工程计划--初步》并提交 | 2017-10-23 19:00 → 2017-10-16 19:00 (-7d) | 2017-10-27 21:00 → 2017-10-20 21:00 (-7d) |  | none → 9 |  |
| 17 | 撰写WBS图、OBS图、gantt图 | 2017-10-23 19:00 → 2017-10-16 19:00 (-7d) | 2017-10-24 21:00 → 2017-10-17 21:00 (-7d) |  | none → 9 |  |
| 19 | 撰写《QA计划》 |  | 2017-11-03 21:00 → 2017-11-05 21:30 (+2d) | 3.33d → 4.83d |  |  |
| 20 | 提交《QA计划》和项目各类修改文档 | 2017-11-03 19:00 → 2017-11-05 18:30 (+2d) | 2017-11-03 21:00 → 2017-11-05 20:30 (+2d) |  |  |  |
| 22 | **修改《需求工程项目计划》** |  |  |  | none → 13 |  |
| 23 | 修改《成本管理计划》 | 2016-11-01 19:00 → 2017-10-21 19:00 (+354d) | 2016-11-03 21:00 → 2017-10-23 21:00 (+354d) |  | none → 13 |  |
| 24 | 修改《风险管理计划》 | 2016-11-01 19:00 → 2017-10-21 19:00 (+354d) | 2016-11-03 21:00 → 2017-10-23 21:00 (+354d) |  | none → 13 |  |
| 25 | 修改《范围管理计划》 | 2016-11-03 19:00 → 2017-10-21 19:00 (+352d) | 2016-11-05 21:00 → 2017-10-23 21:00 (+352d) |  | none → 13 |  |
| 26 | 修改《质量管理计划》 | 2016-11-03 19:00 → 2017-10-21 19:00 (+352d) | 2016-11-05 21:00 → 2017-10-23 21:00 (+352d) |  | none → 13 |  |
| 27 | 修改《人力资源管理计划》 | 2016-11-04 19:00 → 2017-10-21 19:00 (+351d) | 2016-11-06 21:00 → 2017-10-23 21:00 (+351d) |  | none → 13 |  |
| 29 | 《需求工程项目计划》评审 | 2017-11-06 19:00 → 2017-11-04 19:00 (-2d) | 2017-11-09 21:00 → 2017-11-07 21:00 (-2d) |  |  | constraint start no earlier than 2017-11-06 19:00 → start no earlier than 2017-11-03 18:30 |
| 30 | 修改《需求工程项目计划》 | 2017-11-10 19:00 → 2017-11-06 18:30 (-4d) | 2017-11-11 21:00 → 2017-11-07 20:30 (-4d) |  |  |  |
| 31 | 提交《需求工程项目计划》 | 2017-11-12 19:00 → 2017-11-08 18:30 (-4d) | 2017-11-12 21:00 → 2017-11-08 20:30 (-4d) |  |  |  |
| 32 | **需求分析** |  |  |  | none → 29 |  |
| 33 | **撰写《用户代表确认文档》** |  |  |  | none → 29 |  |
| 34 | 撰写《教师代表确认文档》 | 2017-11-15 19:00 → 2017-11-08 19:00 (-7d) | 2017-11-15 21:00 → 2017-11-08 21:00 (-7d) |  | none → 29 |  |
| 35 | 撰写《学生代表确认文档》 | 2017-11-15 19:00 → 2017-11-08 19:00 (-7d) | 2017-11-15 21:00 → 2017-11-08 21:00 (-7d) |  | none → 29 | resources 赵伟 [200%] → 赵伟 |
| 36 | 撰写《管理员代表确认文档》 | 2017-11-15 19:00 → 2017-11-08 19:00 (-7d) | 2017-11-15 21:00 → 2017-11-08 21:00 (-7d) |  | none → 29 | resources 余泽伟 [200%] → 余泽伟 |
| 37 | 界面原型设计-初步 | 2017-11-17 19:00 → 2017-11-16 19:00 (-1d) | 2017-11-19 21:00 → 2017-11-18 21:00 (-1d) |  |  |  |
| 39 | 撰写《教师用例文档》 | 2017-11-17 19:00 → 2017-11-19 19:00 (+2d) | 2017-11-19 21:00 → 2017-11-21 21:00 (+2d) |  | none → 37 |  |
| 40 | 撰写《学生用例文档》 | 2017-11-17 19:00 → 2017-11-19 19:00 (+2d) | 2017-11-19 21:00 → 2017-11-21 21:00 (+2d) |  | none → 37 |  |
| 41 | 撰写《管理员用例文档》 | 2017-11-17 19:00 → 2017-11-19 19:00 (+2d) | 2017-11-19 21:00 → 2017-11-21 21:00 (+2d) |  | none → 37 |  |
| 42 | 撰写《游客用例文档》 |  |  |  | none → 37 |  |
| 43 | 《前景与范围文档》修改 | 2017-11-20 19:00 → 2017-11-19 19:00 (-1d) | 2017-11-20 21:00 → 2017-11-19 21:00 (-1d) |  | none → 37 |  |
| 46 | 第一次访谈客户代表 | 2017-11-26 19:00 → 2017-11-07 18:30 (-19d) | 2017-11-26 20:00 → 2017-11-07 19:30 (-19d) |  |  |  |
| 47 | 第一次访谈教师代表 | 2017-11-21 19:00 → 2017-11-07 18:30 (-14d) | 2017-11-21 21:00 → 2017-11-07 20:30 (-14d) |  |  |  |
| 48 | 修改界面原型 | 2017-11-26 19:00 → 2017-11-19 19:00 (-7d) | 2017-11-27 21:00 → 2017-11-20 21:00 (-7d) |  | none → 37 |  |
| 49 | 修改《教师用例文档》 | 2017-11-26 19:00 → 2017-11-22 19:00 (-4d) | 2017-11-27 21:00 → 2017-11-23 21:00 (-4d) |  | none → 39 |  |
| 51 | 草拟需求规格说明书 | 2017-12-01 19:00 → 2017-11-21 19:00 (-10d) | 2017-12-03 21:00 → 2017-11-23 21:00 (-10d) |  |  |  |
| 52 | 撰写《数据字典》 | 2017-12-03 19:00 → 2017-11-07 20:30 (-26d) | 2017-12-03 21:00 → 2017-11-08 20:30 (-25d) |  |  |  |
| 56 | 修改《教师用例文档》 | 2017-12-05 19:00 → 2017-11-24 19:00 (-11d) | 2017-12-05 21:00 → 2017-11-24 21:00 (-11d) |  | none → 49 |  |
| 57 | 修改数据字典 | 2017-12-05 19:00 → 2017-11-08 20:30 (-27d) | 2017-12-07 21:00 → 2017-11-11 20:30 (-26d) |  | none → 52 |  |
| 58 | 撰写《软件用户手册》 | 2017-12-07 19:00 → 2017-11-21 19:00 (-16d) | 2017-12-07 21:00 → 2017-11-21 21:00 (-16d) |  |  |  |
| 61 | 修改《软件需求规格说明书》 | 2017-12-15 19:00 → 2017-11-24 19:00 (-21d) | 2017-12-16 21:00 → 2017-11-25 21:00 (-21d) |  | none → 51 |  |
| 62 | 修改《管理员用例文档》 | 2017-12-16 19:00 → 2017-11-22 19:00 (-24d) | 2017-12-16 21:00 → 2017-11-22 21:00 (-24d) |  | none → 41 |  |
| 64 | 修改《教师测试用例》 | 2017-12-16 19:00 → 2017-11-25 19:00 (-21d) | 2017-12-16 21:00 → 2017-11-25 21:00 (-21d) |  | none → 56 |  |
| 66 | 修改《软件用户手册》 | 2017-12-18 19:00 → 2017-12-15 18:30 (-3d) | 2017-12-18 21:00 → 2017-12-15 20:30 (-3d) |  | none → 58 |  |
| 67 | SRS评审 | 2017-12-18 19:00 → 2017-11-26 19:00 (-22d) | 2017-12-18 21:00 → 2017-11-30 20:00 (-18d) | 0.67d → 3d | none → 61 | was named 提交修改《软件需求规格说明书》、对话框图、数据流图 |
| 68 | 修改《软件需求规格说明书》 | 2017-12-20 19:00 → 2017-12-23 18:30 (+3d) | 2017-12-21 21:00 → 2017-12-24 20:30 (+3d) |  |  |  |
| 69 | JAD会议 | 2017-12-21 19:00 → 2017-11-30 20:00 (-21d) | 2017-12-21 21:00 → 2017-12-01 20:00 (-20d) |  | 51 → 67 |  |
| 70 | **项目控制** | 2017-12-19 19:00 → 2017-12-25 18:30 (+6d) | 2018-01-07 21:00 → 2017-12-31 21:30 (-7d) | 13.33d → 5d |  |  |
| 71 | **需求变更** | 2017-12-19 19:00 → 2017-12-25 18:30 (+6d) | 2017-12-28 21:00 → 2017-12-29 21:30 (+1d) | 6.67d → 3.67d | none → 67 |  |
| 72 | 撰写《需求变更文档》并提交 | 2017-12-20 19:00 → 2017-12-01 20:00 (-19d) | 2017-12-22 21:00 → 2017-12-04 20:00 (-18d) |  | none → 67 |  |
| 73 | 撰写《需求变更申请报告》并提交 | 2017-12-23 19:00 → 2017-12-01 20:00 (-22d) | 2017-12-25 21:00 → 2017-12-04 20:00 (-21d) |  | none → 67 |  |
| 75 | **项目收尾** | 2017-12-29 19:00 → 2018-01-01 18:30 (+3d) | 2018-01-14 21:00 → 2018-01-17 20:30 (+3d) |  | 70 → 28 |  |
| 76 | 撰写《项目绩效评价》 | 2017-12-29 19:00 → 2018-01-02 18:30 (+4d) | 2017-12-30 20:00 → 2018-01-03 19:30 (+4d) |  | none → 74 |  |
| 77 | 撰写《系统设计与实现计划》 | 2018-01-10 19:00 → 2018-01-01 18:30 (-9d) | 2018-01-11 20:00 → 2018-01-02 19:30 (-9d) |  | none → 74 |  |
| 78 | 撰写《软件概要设计说明》 | 2017-10-10 19:00 → 2018-01-04 18:30 (+86d) | 2017-10-13 20:30 → 2018-01-07 20:00 (+86d) |  | none → 74 |  |
| 79 | 撰写《测试计划》 | 2018-01-03 19:00 → 2018-01-04 18:30 (+1d) | 2018-01-05 19:30 → 2018-01-05 21:00 |  | none → 74 |  |
| 80 | 撰写《安装部署计划》 | 2017-12-31 19:00 → 2018-01-04 18:30 (+4d) | 2018-01-03 20:30 → 2018-01-07 20:00 (+4d) |  | none → 74 |  |
| 81 | 撰写《培训计划》 | 2018-01-06 19:00 → 2018-01-06 18:30 | 2018-01-08 21:00 → 2018-01-08 20:30 |  | none → 74 |  |
| 82 | 撰写《系统维护计划》 | 2018-01-08 19:00 → 2018-01-09 18:30 (+1d) | 2018-01-10 19:30 → 2018-01-10 21:00 |  | none → 74 |  |
| 83 | 修改整理各类旧文档及PPT | 2018-01-11 19:00 → 2018-01-11 18:30 | 2018-01-11 20:30 → 2018-01-11 20:00 |  | none → 82 |  |
| 84 | 撰写《项目总结报告》及PPT | 2018-01-12 19:00 → 2018-01-12 18:30 | 2018-01-12 20:30 → 2018-01-12 20:00 |  | none → 83 |  |
| 85 | 修改《项目总结报告》 | 2018-01-13 19:00 → 2018-01-13 18:30 | 2018-01-13 21:00 → 2018-01-13 20:30 |  |  |  |
| 86 | 评审 | 2018-01-14 19:00 → 2018-01-14 18:30 | 2018-01-14 19:00 → 2018-01-14 18:30 |  | none → 85 |  |

## Version 5 (data date 2017-11-11, saved 2017-11-11, file 甘特图 11-11.mpp)

Note of the change: 甘特图更新至11-11

Last finish stays 2018-01-17. Complete tasks 0 → 35.

Added:

| ID | Task | Duration | Start | Finish | Resources |
| --- | --- | --- | --- | --- | --- |
| 17 | UML概述ppt制作 | 2.33d | 2017-11-10 A | 2017-11-12 | 李文杰 |
| 19 | 例会 | 1d | 2017-09-29 A | 2017-09-29 A | 陈启强; 李文杰; 余泽伟; 赵伟 |
| 20 | 例会 | 1d | 2017-10-13 A | 2017-10-13 A | 陈启强; 李文杰; 余泽伟; 赵伟 |
| 21 | 例会 | 1d | 2017-10-20 A | 2017-10-20 A | 陈启强; 李文杰; 余泽伟; 赵伟 |
| 22 | 例会 | 1d | 2017-10-27 A | 2017-10-27 A | 陈启强; 李文杰; 余泽伟; 赵伟 |
| 23 | 例会 | 1d | 2017-11-04 A | 2017-11-04 A | 陈启强; 李文杰; 余泽伟; 赵伟 |
| 24 | 例会 | 1d | 2017-11-11 | 2017-11-11 | 陈启强; 李文杰; 余泽伟; 赵伟 |
| 25 | 例会 | 1d | 2017-11-17 | 2017-11-17 | 陈启强; 李文杰; 余泽伟; 赵伟 |
| 26 | 例会 | 1d | 2017-11-24 | 2017-11-24 | 陈启强; 李文杰; 余泽伟; 赵伟 |
| 27 | 例会 | 1d | 2017-12-01 | 2017-12-01 | 陈启强; 李文杰; 余泽伟; 赵伟 |
| 28 | 例会 | 1d | 2017-12-08 | 2017-12-08 | 陈启强; 李文杰; 余泽伟; 赵伟 |
| 29 | 例会 | 1d | 2017-12-15 | 2017-12-15 | 陈启强; 李文杰; 余泽伟; 赵伟 |
| 30 | 例会 | 1d | 2017-12-22 | 2017-12-22 | 陈启强; 李文杰; 余泽伟; 赵伟 |
| 31 | 例会 | 1d | 2017-12-29 | 2017-12-29 | 陈启强; 李文杰; 余泽伟; 赵伟 |
| 32 | 例会 | 1d | 2018-01-05 | 2018-01-05 | 陈启强; 李文杰; 余泽伟; 赵伟 |

Changed:

| ID | Task | Start | Finish | Duration | Complete | Other |
| --- | --- | --- | --- | --- | --- | --- |
| 1 | **项目启动** | 2017-09-28 19:00 → 2017-09-28 A | 2017-10-20 21:00 → 2017-10-20 A |  | 0% → 100% | baseline start none → 2017-09-28; baseline finish none → 2017-10-20 |
| 2 | 团队建立 | 2017-09-28 19:00 → 2017-09-28 A | 2017-09-28 21:00 → 2017-09-28 A |  | 0% → 100% | baseline start none → 2017-09-28; baseline finish none → 2017-09-28 |
| 3 | 搜集文档模板并确定模版标准 | 2017-09-29 19:00 → 2017-09-29 A | 2017-10-01 21:00 → 2017-10-01 A |  | 0% → 100% | baseline start none → 2017-09-29; baseline finish none → 2017-10-01 |
| 4 | 软件安装 | 2017-10-02 19:00 → 2017-10-02 A | 2017-10-06 21:00 → 2017-10-06 A |  | 0% → 100% | baseline start none → 2017-10-02; baseline finish none → 2017-10-06 |
| 5 | 撰写《可行性研究报告》并进行初次提交 | 2017-10-02 19:00 → 2017-10-02 A | 2017-10-07 21:00 → 2017-10-07 A |  | 0% → 100% | constraint start no earlier than 2017-10-08 19:00 → start no earlier than 2017-10-08; baseline start none → 2017-10-02; baseline finish none → 2017-10-07 |
| 6 | 撰写《项目开发设计》报告并进行初次提交 | 2017-10-08 19:00 → 2017-10-08 A | 2017-10-13 21:00 → 2017-10-13 A |  | 0% → 100% | baseline start none → 2017-10-08; baseline finish none → 2017-10-13 |
| 7 | 修改《可行性研究报告》 | 2017-10-08 19:00 → 2017-10-08 A | 2017-10-14 21:00 → 2017-10-14 A |  | 0% → 100% | constraint start no earlier than 2017-10-13 19:00 → start no earlier than 2017-10-13; baseline start none → 2017-10-08; baseline finish none → 2017-10-14 |
| 8 | 修改《项目开发设计》报告 | 2017-10-14 19:00 → 2017-10-14 A | 2017-10-20 21:00 → 2017-10-20 A |  | 0% → 100% | baseline start none → 2017-10-14; baseline finish none → 2017-10-20 |
| 9 | 提交《可行性研究报告》与《项目开发设计》报告 | 2017-10-15 19:00 → 2017-10-15 A | 2017-10-15 21:00 → 2017-10-15 A |  | 0% → 100% | baseline start none → 2017-10-15; baseline finish none → 2017-10-15 |
| 10 | **项目规划** | 2017-10-20 19:00 → 2017-10-20 | 2017-11-03 21:00 → 2017-11-03 |  | 0% → 81% | baseline start none → 2017-10-20; baseline finish none → 2017-11-03 |
| 11 | 撰写WBS图、OBS图、gantt图 | 2017-10-16 19:00 → 2017-10-16 A | 2017-10-17 21:00 → 2017-10-17 A |  | 0% → 100% | constraint start no earlier than 2017-10-23 19:00 → start no earlier than 2017-10-23; baseline start none → 2017-10-16; baseline finish none → 2017-10-17 |
| 12 | 撰写《项目章程》 | 2017-10-16 19:00 → 2017-10-16 A | 2017-10-20 21:00 → 2017-10-20 A |  | 0% → 100% | constraint start no earlier than 2017-10-20 19:00 → start no earlier than 2017-10-20; baseline start none → 2017-10-16; baseline finish none → 2017-10-20 |
| 13 | 撰写《项目总体计划》 | 2017-10-16 19:00 → 2017-10-16 A | 2017-10-20 21:00 → 2017-10-20 A |  | 0% → 100% | constraint start no earlier than 2017-10-23 19:00 → start no earlier than 2017-10-23; resources 李文杰 [200%] → 李文杰; baseline start none → 2017-10-16; baseline finish none → 2017-10-20 |
| 14 | 撰写《需求工程计划--初步》并提交 | 2017-10-16 19:00 → 2017-10-16 A | 2017-10-20 21:00 → 2017-10-20 A |  | 0% → 100% | baseline start none → 2017-10-16; baseline finish none → 2017-10-20 |
| 15 | UML概述ppt制作 | 2017-10-25 19:00 → 2017-10-25 A | 2017-10-28 21:00 → 2017-10-28 A |  | 0% → 100% | baseline start none → 2017-10-25; baseline finish none → 2017-10-28 |
| 16 | UML概述ppt制作 | 2017-10-25 19:00 → 2017-10-25 A | 2017-10-28 21:00 → 2017-10-28 A |  | 0% → 100% | baseline start none → 2017-10-25; baseline finish none → 2017-10-28 |
| 18 | UML概述ppt制作 | 2017-10-25 19:00 → 2017-10-25 A | 2017-10-28 21:00 → 2017-10-28 A |  | 0% → 100% | baseline start none → 2017-10-25; baseline finish none → 2017-10-28 |
| 33 | 提交《项目章程》、《项目总体计划》 | 2017-10-25 19:00 → 2017-10-25 A | 2017-10-25 21:00 → 2017-10-25 A |  | 0% → 100% | baseline start none → 2017-10-25; baseline finish none → 2017-10-25 |
| 34 | 撰写《QA计划》 | 2017-10-30 19:00 → 2017-10-30 A | 2017-11-05 21:30 → 2017-11-05 A |  | 0% → 100% | resources 李文杰 → 赵伟; baseline start none → 2017-10-30; baseline finish none → 2017-11-05 |
| 35 | 提交《QA计划》和项目各类修改文档 | 2017-11-05 18:30 → 2017-11-05 A | 2017-11-05 20:30 → 2017-11-05 A |  | 0% → 100% | baseline start none → 2017-11-05; baseline finish none → 2017-11-05 |
| 36 | 修改《需求工程项目计划》 | 2017-10-28 19:00 → 2017-10-28 A | 2017-11-03 21:00 → 2017-11-03 A |  | 0% → 100% | baseline start none → 2017-10-28; baseline finish none → 2017-11-03 |
| 37 | **修改《需求工程项目计划》** | 2016-11-01 19:00 → 2017-10-21 A (+354d) | 2016-11-06 21:00 → 2017-10-26 (+354d) |  | 0% → 100% | baseline start none → 2016-11-01; baseline finish none → 2016-11-06 |
| 38 | 修改《成本管理计划》 | 2017-10-21 19:00 → 2017-10-21 A | 2017-10-23 21:00 → 2017-10-23 A |  | 0% → 100% | baseline start none → 2017-10-21; baseline finish none → 2017-10-23 |
| 39 | 修改《风险管理计划》 | 2017-10-21 19:00 → 2017-10-21 A | 2017-10-23 21:00 → 2017-10-23 A |  | 0% → 100% | baseline start none → 2017-10-21; baseline finish none → 2017-10-23 |
| 40 | 修改《范围管理计划》 | 2017-10-21 19:00 → 2017-10-21 A | 2017-10-23 21:00 → 2017-10-23 A |  | 0% → 100% | baseline start none → 2017-10-21; baseline finish none → 2017-10-23 |
| 41 | 修改《质量管理计划》 | 2017-10-21 19:00 → 2017-10-21 A | 2017-10-23 21:00 → 2017-10-23 A |  | 0% → 100% | resources 赵伟 → 李文杰; baseline start none → 2017-10-21; baseline finish none → 2017-10-23 |
| 42 | 修改《人力资源管理计划》 | 2017-10-21 19:00 → 2017-10-21 A | 2017-10-23 21:00 → 2017-10-23 A |  | 0% → 100% | baseline start none → 2017-10-21; baseline finish none → 2017-10-23 |
| 43 | **项目执行** | 2017-11-05 19:00 → 2017-11-05 | 2017-12-26 21:00 → 2017-12-26 |  | 0% → 16% | baseline start none → 2017-11-05; baseline finish none → 2017-12-26 |
| 44 | 《需求工程项目计划》评审 | 2017-11-04 19:00 → 2017-11-04 A | 2017-11-07 21:00 → 2017-11-07 A |  | 0% → 100% | constraint start no earlier than 2017-11-03 18:30 → start no earlier than 2017-11-03; baseline start none → 2017-11-04; baseline finish none → 2017-11-07 |
| 45 | 修改《需求工程项目计划》 | 2017-11-06 18:30 → 2017-11-06 A | 2017-11-07 20:30 → 2017-11-07 A |  | 0% → 100% | baseline start none → 2017-11-06; baseline finish none → 2017-11-07 |
| 46 | 提交《需求工程项目计划》 | 2017-11-08 18:30 → 2017-11-08 A | 2017-11-08 20:30 → 2017-11-08 A |  | 0% → 100% | baseline start none → 2017-11-08; baseline finish none → 2017-11-08 |
| 47 | **需求分析** | 2017-11-13 19:00 → 2017-11-13 | 2017-12-26 21:00 → 2017-12-26 |  | 0% → 8% | baseline start none → 2017-11-13; baseline finish none → 2017-12-26 |
| 48 | **撰写《用户代表确认文档》** | 2017-11-14 19:00 → 2017-11-14 | 2017-11-15 21:00 → 2017-11-15 |  | 0% → 100% | baseline start none → 2017-11-14; baseline finish none → 2017-11-15 |
| 49 | 撰写《教师代表确认文档》 | 2017-11-08 19:00 → 2017-11-08 A | 2017-11-08 21:00 → 2017-11-08 A |  | 0% → 100% | baseline start none → 2017-11-08; baseline finish none → 2017-11-08 |
| 50 | 撰写《学生代表确认文档》 | 2017-11-08 19:00 → 2017-11-08 A | 2017-11-08 21:00 → 2017-11-08 A |  | 0% → 100% | resources 赵伟 → 陈启强; baseline start none → 2017-11-08; baseline finish none → 2017-11-08 |
| 51 | 撰写《管理员代表确认文档》 | 2017-11-08 19:00 → 2017-11-08 A | 2017-11-08 21:00 → 2017-11-08 A |  | 0% → 100% | baseline start none → 2017-11-08; baseline finish none → 2017-11-08 |
| 52 | 界面原型设计-初步 | 2017-11-16 19:00 → 2017-11-13 (-3d) | 2017-11-18 21:00 → 2017-11-19 (+1d) | 2d → 5d |  | resources 陈启强 → 陈启强; 余泽伟; 赵伟; 李文杰; baseline start none → 2017-11-16; baseline finish none → 2017-11-18 |
| 53 | **撰写用例文档** | 2017-11-17 19:00 → 2017-11-17 | 2017-11-22 20:00 → 2017-11-22 |  |  | baseline start none → 2017-11-17; baseline finish none → 2017-11-22 |
| 54 | 撰写《教师用例文档》 | 2017-11-19 19:00 → 2017-11-24 (+5d) | 2017-11-21 21:00 → 2017-11-26 (+5d) | 2d → 2.33d |  | baseline start none → 2017-11-19; baseline finish none → 2017-11-21 |
| 55 | 撰写《学生用例文档》 | 2017-11-19 19:00 → 2017-11-24 (+5d) | 2017-11-21 21:00 → 2017-11-26 (+5d) | 2d → 2.33d |  | baseline start none → 2017-11-19; baseline finish none → 2017-11-21 |
| 56 | 撰写《管理员用例文档》 | 2017-11-19 19:00 → 2017-11-24 (+5d) | 2017-11-21 21:00 → 2017-11-26 (+5d) | 2d → 2.33d |  | baseline start none → 2017-11-19; baseline finish none → 2017-11-21 |
| 57 | 撰写《游客用例文档》 | 2017-11-19 19:00 → 2017-11-24 (+5d) | 2017-11-21 21:00 → 2017-11-26 (+5d) | 2d → 2.33d |  | baseline start none → 2017-11-19; baseline finish none → 2017-11-21 |
| 58 | 《前景与范围文档》修改 | 2017-11-19 19:00 → 2017-11-19 | 2017-11-19 21:00 → 2017-11-19 |  |  | resources 陈启强 → 李文杰; baseline start none → 2017-11-19; baseline finish none → 2017-11-19 |
| 59 | 提交《用例与用例文档》、界面原型、《前景与范围》、《用户群分类》 | 2017-11-20 19:00 → 2017-11-20 | 2017-11-20 21:00 → 2017-11-20 |  |  | baseline start none → 2017-11-20; baseline finish none → 2017-11-20 |
| 60 | 修改《学生用例文档》 | 2017-11-22 19:00 → 2017-11-22 | 2017-11-24 21:00 → 2017-11-24 |  |  | baseline start none → 2017-11-22; baseline finish none → 2017-11-24 |
| 61 | 第一次访谈客户代表 | 2017-11-07 18:30 → 2017-11-13 (+6d) | 2017-11-07 19:30 → 2017-11-13 (+6d) |  |  | baseline start none → 2017-11-07; baseline finish none → 2017-11-07 |
| 62 | 第一次访谈教师代表 | 2017-11-07 18:30 → 2017-11-27 (+20d) | 2017-11-07 20:30 → 2017-11-27 (+20d) |  |  | baseline start none → 2017-11-07; baseline finish none → 2017-11-07 |
| 63 | 修改界面原型 | 2017-11-19 19:00 → 2017-11-19 | 2017-11-20 21:00 → 2017-11-20 |  |  | baseline start none → 2017-11-19; baseline finish none → 2017-11-20 |
| 64 | 修改《教师用例文档》 | 2017-11-22 19:00 → 2017-11-22 | 2017-11-23 21:00 → 2017-11-23 |  |  | resources 赵伟 [80%] → 李文杰 [80%]; baseline start none → 2017-11-22; baseline finish none → 2017-11-23 |
| 65 | 修改《学生用例文档》 | 2017-12-01 19:00 → 2017-12-01 | 2017-12-03 21:00 → 2017-12-03 |  |  | resources 赵伟 [80%] → 陈启强 [80%]; baseline start none → 2017-12-01; baseline finish none → 2017-12-03 |
| 66 | 草拟需求规格说明书 | 2017-11-21 19:00 → 2017-11-21 | 2017-11-23 21:00 → 2017-11-23 |  |  | resources 陈启强 [400%] → 陈启强; 李文杰; 余泽伟; 赵伟; baseline start none → 2017-11-21; baseline finish none → 2017-11-23 |
| 67 | 撰写《数据字典》 | 2017-11-07 20:30 → 2017-11-26 (+19d) | 2017-11-08 20:30 → 2017-11-26 (+18d) |  |  | resources 李文杰 [150%]; 赵伟 [150%]; 余泽伟 [150%]; 陈启强 [150%] → 赵伟; 余泽伟; 陈启强; baseline start none → 2017-11-07; baseline finish none → 2017-11-08 |
| 68 | 提交《用例与用例文档》、界面原型、ER图、《需求规格说明书》 | 2017-12-04 19:00 → 2017-12-04 | 2017-12-04 21:00 → 2017-12-04 |  |  | baseline start none → 2017-12-04; baseline finish none → 2017-12-04 |
| 69 | 第二次访谈教师代表 | 2017-12-05 19:00 → 2017-12-05 | 2017-12-05 21:00 → 2017-12-05 |  |  | baseline start none → 2017-12-05; baseline finish none → 2017-12-05 |
| 70 | 修改界面原型 | 2017-12-06 19:00 → 2017-12-06 | 2017-12-07 21:00 → 2017-12-07 |  |  | resources 余泽伟 → 余泽伟; 陈启强; baseline start none → 2017-12-06; baseline finish none → 2017-12-07 |
| 71 | 修改《教师用例文档》 | 2017-11-24 19:00 → 2017-11-24 | 2017-11-24 21:00 → 2017-11-24 |  |  | baseline start none → 2017-11-24; baseline finish none → 2017-11-24 |
| 72 | 修改数据字典 | 2017-11-08 20:30 → 2017-11-08 A | 2017-11-11 20:30 → 2017-11-11 |  | 0% → 75% | baseline start none → 2017-11-08; baseline finish none → 2017-11-11 |
| 73 | 撰写《软件用户手册》 | 2017-11-21 19:00 → 2017-11-21 | 2017-11-21 21:00 → 2017-11-21 |  |  | baseline start none → 2017-11-21; baseline finish none → 2017-11-21 |
| 74 | 修改《教师用例文档》 | 2017-12-09 19:00 → 2017-12-09 | 2017-12-10 21:00 → 2017-12-10 |  |  | baseline start none → 2017-12-09; baseline finish none → 2017-12-10 |
| 75 | 修改《学生用例文档》 | 2017-12-10 19:00 → 2017-12-10 | 2017-12-10 21:00 → 2017-12-10 |  |  | baseline start none → 2017-12-10; baseline finish none → 2017-12-10 |
| 76 | 修改《软件需求规格说明书》 | 2017-11-24 19:00 → 2017-11-24 | 2017-11-25 21:00 → 2017-11-25 |  |  | baseline start none → 2017-11-24; baseline finish none → 2017-11-25 |
| 77 | 修改《管理员用例文档》 | 2017-11-22 19:00 → 2017-11-22 | 2017-11-22 21:00 → 2017-11-22 |  |  | baseline start none → 2017-11-22; baseline finish none → 2017-11-22 |
| 78 | 修改《教师用例文档》 | 2017-12-16 19:00 → 2017-12-16 | 2017-12-16 21:00 → 2017-12-16 |  |  | baseline start none → 2017-12-16; baseline finish none → 2017-12-16 |
| 79 | 修改《教师测试用例》 | 2017-11-25 19:00 → 2017-11-25 | 2017-11-25 21:00 → 2017-11-25 |  |  | baseline start none → 2017-11-25; baseline finish none → 2017-11-25 |
| 80 | 修改数据字典 | 2017-12-15 19:00 → 2017-12-15 | 2017-12-16 21:00 → 2017-12-16 |  |  | baseline start none → 2017-12-15; baseline finish none → 2017-12-16 |
| 81 | 修改《软件用户手册》 | 2017-12-15 18:30 → 2017-12-15 | 2017-12-15 20:30 → 2017-12-15 |  |  | baseline start none → 2017-12-15; baseline finish none → 2017-12-15 |
| 82 | SRS评审 | 2017-11-26 19:00 → 2017-11-26 | 2017-11-30 20:00 → 2017-11-30 |  |  | resources 陈启强 [5%] → 陈启强; 李文杰; 余泽伟; 赵伟; baseline start none → 2017-11-26; baseline finish none → 2017-11-30 |
| 83 | 修改《软件需求规格说明书》 | 2017-12-23 18:30 → 2017-12-23 | 2017-12-24 20:30 → 2017-12-24 |  |  | baseline start none → 2017-12-23; baseline finish none → 2017-12-24 |
| 84 | JAD会议 | 2017-11-30 20:00 → 2017-11-30 | 2017-12-01 20:00 → 2017-12-01 |  |  | baseline start none → 2017-11-30; baseline finish none → 2017-12-01 |
| 85 | **项目控制** | 2017-12-25 18:30 → 2017-12-25 | 2017-12-31 21:30 → 2017-12-31 |  |  | baseline start none → 2017-12-25; baseline finish none → 2017-12-31 |

| ID | Task | Start | Finish | Other |
| --- | --- | --- | --- | --- |
| 86 | **需求变更** | 2017-12-25 18:30 → 2017-12-25 | 2017-12-29 21:30 → 2017-12-29 | baseline start none → 2017-12-25; baseline finish none → 2017-12-29 |
| 87 | 撰写《需求变更文档》并提交 | 2017-12-01 20:00 → 2017-12-01 | 2017-12-04 20:00 → 2017-12-04 | resources 余泽伟 → 余泽伟; 陈启强; baseline start none → 2017-12-01; baseline finish none → 2017-12-04 |
| 88 | 撰写《需求变更申请报告》并提交 | 2017-12-01 20:00 → 2017-12-01 | 2017-12-04 20:00 → 2017-12-04 | resources 李文杰 → 李文杰; 陈启强; baseline start none → 2017-12-01; baseline finish none → 2017-12-04 |
| 89 | 撰写CCB章程 | 2017-12-01 20:00 → 2017-12-01 | 2017-12-03 21:00 → 2017-12-03 | baseline start none → 2017-12-01; baseline finish none → 2017-12-03 |
| 90 | **项目收尾** | 2018-01-01 18:30 → 2018-01-01 | 2018-01-17 20:30 → 2018-01-17 | baseline start none → 2018-01-01; baseline finish none → 2018-01-17 |
| 91 | 撰写《项目绩效评价》 | 2018-01-02 18:30 → 2018-01-02 | 2018-01-03 19:30 → 2018-01-03 | baseline start none → 2018-01-02; baseline finish none → 2018-01-03 |
| 92 | 撰写《系统设计与实现计划》 | 2018-01-01 18:30 → 2018-01-01 | 2018-01-02 19:30 → 2018-01-02 | baseline start none → 2018-01-01; baseline finish none → 2018-01-02 |
| 93 | 撰写《软件概要设计说明》 | 2018-01-04 18:30 → 2018-01-04 | 2018-01-07 20:00 → 2018-01-07 | baseline start none → 2018-01-04; baseline finish none → 2018-01-07 |
| 94 | 撰写《测试计划》 | 2018-01-04 18:30 → 2018-01-04 | 2018-01-05 21:00 → 2018-01-05 | baseline start none → 2018-01-04; baseline finish none → 2018-01-05 |
| 95 | 撰写《安装部署计划》 | 2018-01-04 18:30 → 2018-01-04 | 2018-01-07 20:00 → 2018-01-07 | baseline start none → 2018-01-04; baseline finish none → 2018-01-07 |
| 96 | 撰写《培训计划》 | 2018-01-06 18:30 → 2018-01-06 | 2018-01-08 20:30 → 2018-01-08 | baseline start none → 2018-01-06; baseline finish none → 2018-01-08 |
| 97 | 撰写《系统维护计划》 | 2018-01-09 18:30 → 2018-01-09 | 2018-01-10 21:00 → 2018-01-10 | baseline start none → 2018-01-09; baseline finish none → 2018-01-10 |
| 98 | 修改整理各类旧文档及PPT | 2018-01-11 18:30 → 2018-01-11 | 2018-01-11 20:00 → 2018-01-11 | baseline start none → 2018-01-11; baseline finish none → 2018-01-11 |
| 99 | 撰写《项目总结报告》及PPT | 2018-01-12 18:30 → 2018-01-12 | 2018-01-12 20:00 → 2018-01-12 | baseline start none → 2018-01-12; baseline finish none → 2018-01-12 |
| 100 | 修改《项目总结报告》 | 2018-01-13 18:30 → 2018-01-13 | 2018-01-13 20:30 → 2018-01-13 | baseline start none → 2018-01-13; baseline finish none → 2018-01-13 |
| 101 | 评审 | 2018-01-14 18:30 → 2018-01-14 | 2018-01-14 18:30 → 2018-01-14 | baseline start none → 2018-01-14; baseline finish none → 2018-01-14 |

## Version 6 (data date 2017-11-11, saved 2017-11-15, file 甘特图.mpp)

Note of the change: 甘特图更新

Last finish 2018-01-17 → 2018-01-18 (+1d). Complete tasks 35 → 17.

Added:

| ID | Task | Duration | Start | Finish | Predecessors | Resources |
| --- | --- | --- | --- | --- | --- | --- |
| 46 | **需求获取** | 19.33d | 2017-11-05 | 2017-12-03 |  |  |
| 47 | 草拟《前景与范围》 | 2d | 2017-11-05 | 2017-11-07 | 43 | 李文杰 [20%] |
| 70 | **撰写优先级排序表** | 0.67d? | 2017-12-02 | 2017-12-02 | 59 |  |
| 71 | 撰写《教师优先级打分表》 | 1d | 2017-12-02 | 2017-12-02 | 59 | 陈启强 [20%]; 赵伟 [20%] |
| 72 | 撰写《学生优先级打分表》 | 1d | 2017-11-02 | 2017-11-02 | 59 | 陈启强 [20%] |
| 73 | 撰写《管理员优先级打分表》 | 1d | 2017-11-02 | 2017-11-02 | 59 | 陈启强 [20%] |
| 77 | **编写测试用例** | 0.83d | 2017-11-28 | 2017-11-29 |  |  |
| 79 | 编写《学生测试用例》 | 1d | 2017-11-28 | 2017-11-28 |  | 赵伟 [20%] |
| 80 | 编写《管理员测试用例》 | 1d | 2017-11-28 | 2017-11-28 |  | 李文杰 [20%] |

Removed: 13 撰写《项目总体计划》; 60 修改《学生用例文档》; 65 修改《学生用例文档》; 71 修改《教师用例文档》; 74 修改《教师用例文档》; 75 修改《学生用例文档》; 78 修改《教师用例文档》; 80 修改数据字典

Changed:

| ID | Task | Start | Finish | Duration | Complete | Predecessors | Other |
| --- | --- | --- | --- | --- | --- | --- | --- |
| 1 | **项目启动** |  | 2017-10-20 A → 2017-10-20 |  | 100% → 65% |  |  |
| 2 | 团队建立 |  | 2017-09-28 A → 2017-09-29 (+1d) | 0.67d → 1d | 100% → 67% |  | resources 李文杰 [50%]; 余泽伟 [50%]; 赵伟 [50%]; 陈启强 [50%] → 李文杰 [30%]; 余泽伟 [30%]; 赵伟 [30%]; 陈启强 [30%] |
| 3 | 搜集文档模板并确定模版标准 |  | 2017-10-01 A → 2017-09-30 A (-1d) | 2d → 1d |  |  | resources 李文杰 [50%]; 赵伟 [50%]; 余泽伟 [50%]; 陈启强 [50%] → 李文杰 [30%]; 赵伟 [30%]; 余泽伟 [30%]; 陈启强 [30%] |
| 4 | 软件安装 |  | 2017-10-06 A → 2017-10-07 (+1d) | 3.33d → 3.67d | 100% → 82% |  |  |
| 5 | 撰写《可行性研究报告》并进行初次提交 |  | 2017-10-07 A → 2017-10-08 (+1d) | 4d → 5d | 100% → 80% |  | constraint start no earlier than 2017-10-08 → start no earlier than 2017-10-02; resources 赵伟 → 赵伟 [50%] |
| 6 | 撰写《项目开发设计》报告并进行初次提交 |  | 2017-10-13 A → 2017-10-12 A (-1d) | 4d → 3.5d |  |  | resources 陈启强 → 陈启强 [20%]; 李文杰 [20%] |
| 7 | 修改《可行性研究报告》 |  | 2017-10-14 A → 2017-10-13 (-1d) | 4.67d → 4.17d | 100% → 0% |  | constraint start no earlier than 2017-10-13 → start no earlier than 2017-10-08; resources 余泽伟 [80%] → 赵伟 [10%] |
| 8 | 修改《项目开发设计》报告 |  | 2017-10-20 A → 2017-10-19 (-1d) | 4.67d → 0.67d | 100% → 0% |  | resources 陈启强 → 陈启强 [20%]; 李文杰 [20%] |
| 10 | **项目规划** | 2017-10-20 → 2017-10-09 (-11d) | 2017-11-03 → 2018-01-05 (+63d) | 10d → 59.67d | 81% → 54% |  |  |
| 11 | 撰写WBS图、OBS图、gantt图 | 2017-10-16 A → 2017-10-09 A (-7d) | 2017-10-17 A → 2017-10-13 (-4d) | 1.33d → 3.67d | 100% → 36% | 9 → 5 | constraint start no earlier than 2017-10-23 → start no earlier than 2017-10-09; resources 李文杰; 陈启强; 余泽伟 → 李文杰 [40%] |
| 12 | 撰写《项目章程》 |  | 2017-10-20 A → 2017-10-19 A (-1d) | 3.33d → 2.83d |  |  | resources 余泽伟 → 赵伟 [50%]; 陈启强 [10%] |
| 13 | 撰写《需求工程计划--初步》并提交 |  | 2017-10-20 A → 2017-10-19 A (-1d) | 3.33d → 2.83d |  |  | resources 赵伟 → 余泽伟 [50%] |
| 14 | UML概述ppt制作 | 2017-10-25 A → 2017-10-23 A (-2d) | 2017-10-28 A → 2017-10-26 A (-2d) |  |  |  | resources 余泽伟 → 余泽伟 [50%] |
| 15 | UML概述ppt制作 | 2017-10-25 A → 2017-10-30 A (+5d) | 2017-10-28 A → 2017-11-02 A (+5d) |  |  |  | resources 赵伟 → 李文杰 [50%] |
| 16 | UML概述ppt制作 | 2017-11-10 A → 2017-11-06 (-4d) | 2017-11-12 → 2017-11-09 (-3d) | 2.33d → 3d | 36% → 0% |  | resources 李文杰 → 李文杰 [50%] |
| 17 | UML概述ppt制作 | 2017-10-25 A → 2017-11-19 A (+25d) | 2017-10-28 A → 2017-11-19 A (+22d) | 2.67d → 1d |  |  | resources 余泽伟 → 陈启强 [200%] |
| 18 | 例会 |  | 2017-09-29 A → 2017-09-29 |  | 100% → 30% |  | resources 陈启强; 李文杰; 余泽伟; 赵伟 → 陈启强 [20%]; 李文杰 [20%]; 余泽伟 [20%]; 赵伟 [20%] |
| 19 | 例会 |  | 2017-10-13 A → 2017-10-13 |  | 100% → 30% |  | resources 陈启强; 李文杰; 余泽伟; 赵伟 → 陈启强 [20%]; 李文杰 [20%]; 余泽伟 [20%]; 赵伟 [20%] |
| 20 | 例会 |  | 2017-10-20 A → 2017-10-20 |  | 100% → 30% |  | resources 陈启强; 李文杰; 余泽伟; 赵伟 → 陈启强 [20%]; 李文杰 [20%]; 余泽伟 [20%]; 赵伟 [20%] |
| 21 | 例会 |  | 2017-10-27 A → 2017-10-27 |  | 100% → 30% |  | resources 陈启强; 李文杰; 余泽伟; 赵伟 → 陈启强 [20%]; 李文杰 [20%]; 余泽伟 [20%]; 赵伟 [20%] |
| 22 | 例会 |  | 2017-11-04 A → 2017-11-04 |  | 100% → 30% |  | resources 陈启强; 李文杰; 余泽伟; 赵伟 → 陈启强 [20%]; 李文杰 [20%]; 余泽伟 [20%]; 赵伟 [20%] |
| 23 | 例会 | 2017-11-11 → 2017-11-10 (-1d) | 2017-11-11 → 2017-11-10 (-1d) |  |  |  | resources 陈启强; 李文杰; 余泽伟; 赵伟 → 陈启强 [20%]; 李文杰 [20%]; 余泽伟 [20%]; 赵伟 [20%] |
| 24 | 例会 | 2017-11-17 → 2017-11-18 (+1d) | 2017-11-17 → 2017-11-18 (+1d) |  |  |  | resources 陈启强; 李文杰; 余泽伟; 赵伟 → 陈启强 [20%]; 李文杰 [20%]; 余泽伟 [20%]; 赵伟 [20%] |
| 25 | 例会 |  |  |  |  |  | resources 陈启强; 李文杰; 余泽伟; 赵伟 → 陈启强 [20%]; 李文杰 [20%]; 余泽伟 [20%]; 赵伟 [20%] |
| 26 | 例会 |  |  |  |  |  | resources 陈启强; 李文杰; 余泽伟; 赵伟 → 陈启强 [20%]; 李文杰 [20%]; 余泽伟 [20%]; 赵伟 [20%] |
| 27 | 例会 |  | 2017-12-08 → 2017-12-09 (+1d) |  |  |  | resources 陈启强; 李文杰; 余泽伟; 赵伟 → 陈启强 [20%]; 李文杰 [20%]; 余泽伟 [20%]; 赵伟 [20%] |
| 28 | 例会 |  | 2017-12-15 → 2017-12-16 (+1d) |  |  |  | resources 陈启强; 李文杰; 余泽伟; 赵伟 → 陈启强 [20%]; 李文杰 [20%]; 余泽伟 [20%]; 赵伟 [20%] |
| 29 | 例会 |  | 2017-12-22 → 2017-12-23 (+1d) |  |  |  | resources 陈启强; 李文杰; 余泽伟; 赵伟 → 陈启强 [20%]; 李文杰 [20%]; 余泽伟 [20%]; 赵伟 [20%] |
| 30 | 例会 |  | 2017-12-29 → 2017-12-30 (+1d) |  |  |  | resources 陈启强; 李文杰; 余泽伟; 赵伟 → 陈启强 [20%]; 李文杰 [20%]; 余泽伟 [20%]; 赵伟 [20%] |
| 31 | 例会 |  |  | 1d → 0.3d |  |  | resources 陈启强; 李文杰; 余泽伟; 赵伟 → 陈启强 [20%]; 李文杰 [20%]; 余泽伟 [20%]; 赵伟 [20%] |
| 32 | 提交《项目章程》、《项目总体计划》 |  |  |  |  | 撰写《项目总体计划》, 12 → 12 |  |
| 33 | 撰写《QA计划》 |  | 2017-11-05 A → 2017-11-03 A (-2d) | 4.83d → 3.5d |  |  | resources 赵伟 → 赵伟 [20%] |
| 35 | 修改《需求工程项目计划》 |  |  |  |  |  | resources 余泽伟; 陈启强; 李文杰; 赵伟 → 余泽伟; 陈启强 [20%] |
| 36 | **修改《需求工程项目计划》** |  |  | 4d → 4.33d | 100% → 46% |  |  |
| 37 | 修改《成本管理计划》 |  | 2017-10-23 A → 2017-10-26 (+3d) | 2d → 4.33d | 100% → 46% |  | resources 赵伟 → 李文杰 [10%]; 赵伟 [10%] |
| 38 | 修改《风险管理计划》 |  | 2017-10-23 A → 2017-10-26 (+3d) | 2d → 4.33d | 100% → 46% |  | resources 赵伟 → 李文杰 [10%] |
| 39 | 修改《范围管理计划》 |  | 2017-10-23 A → 2017-10-26 (+3d) | 2d → 4.33d | 100% → 46% |  | resources 余泽伟 → 李文杰 [10%] |
| 40 | 修改《质量管理计划》 |  | 2017-10-23 A → 2017-10-26 (+3d) | 2d → 4.33d | 100% → 46% |  | resources 李文杰 → 余泽伟 [20%] |
| 41 | 修改《人力资源管理计划》 |  | 2017-10-23 A → 2017-10-26 (+3d) | 2d → 4.33d | 100% → 46% |  | resources 陈启强; 李文杰; 余泽伟; 赵伟 → 李文杰 [10%]; 赵伟 [10%] |
| 42 | **项目执行** | 2017-11-05 → 2017-11-04 (-1d) | 2017-12-26 → 2017-12-21 (-5d) | 34.67d → 32.33d | 16% → 11% |  |  |
| 43 | 《需求工程项目计划》评审 |  | 2017-11-07 A → 2017-11-04 A (-3d) | 2.67d → 0.83d |  |  | resources 李文杰; 余泽伟; 赵伟; 陈启强 → 陈启强; 李文杰 [20%]; 余泽伟 [20%]; 赵伟 [20%] |
| 44 | 修改《需求工程项目计划》 | 2017-11-06 A → 2017-11-05 A (-1d) | 2017-11-07 A → 2017-11-07 | 1.33d → 2.33d | 100% → 36% |  | resources 李文杰 [80%] → 余泽伟 [50%] |
| 45 | 提交《需求工程项目计划》 | 2017-11-08 A → 2017-11-11 A (+3d) | 2017-11-08 A → 2017-11-11 A (+3d) | 0.67d → 0.33d |  |  | resources 赵伟 [5%] → 陈启强 [5%] |
| 48 | 第一次访谈客户代表 |  |  |  |  | 66 → 47 | resources 李文杰; 赵伟; 余泽伟; 陈启强 → 陈启强; 李文杰; 余泽伟; 赵伟 |
| 49 | 界面原型设计-初步 |  | 2017-11-19 → 2017-11-17 (-2d) | 5d → 3.67d |  | 55 → 48 | resources 陈启强; 余泽伟; 赵伟; 李文杰 → 陈启强 [30%]; 余泽伟 [30%]; 赵伟 [30%]; 李文杰 [30%] |
| 50 | 第一次访谈教师代表 | 2017-11-27 → 2017-11-20 (-7d) | 2017-11-27 → 2017-11-20 (-7d) | 0.67d → 0.33d |  | 66 → 49 | resources 李文杰; 赵伟; 余泽伟; 陈启强 → 陈启强; 李文杰; 余泽伟; 赵伟 |
| 51 | 修改界面原型 | 2017-11-19 → 2017-11-25 (+6d) | 2017-11-20 → 2017-11-26 (+6d) | 1.33d → 1.67d |  | 49 → 50 | resources 陈启强 → 陈启强 [30%]; 李文杰 [30%]; 余泽伟 [30%]; 赵伟 [30%] |
| 52 | 第二次访谈教师代表 | 2017-12-05 → 2017-11-27 (-8d) | 2017-12-05 → 2017-11-27 (-8d) | 0.67d → 0.33d |  |  | resources 李文杰; 赵伟; 余泽伟; 陈启强 → 陈启强; 李文杰; 余泽伟; 赵伟 |
| 53 | 修改界面原型 | 2017-12-06 → 2017-12-02 (-4d) | 2017-12-07 → 2017-12-03 (-4d) | 1.33d → 1.67d |  |  | resources 余泽伟; 陈启强 → 陈启强 [30%]; 李文杰 [30%]; 余泽伟 [30%]; 赵伟 [30%]; baseline start 2017-12-06 → none; baseline finish 2017-12-07 → none |
| 54 | **需求分析** | 2017-11-13 → 2017-11-08 (-5d) | 2017-12-26 → 2017-12-24 (-2d) | 29.33d → 31.67d | 8% → 9% |  |  |
| 55 | **撰写《用户代表确认文档》** | 2017-11-14 → 2017-11-21 A (+7d) | 2017-11-15 → 2017-11-21 A (+6d) | 1.33d → 1d |  |  |  |
| 56 | 撰写《教师代表确认文档》 | 2017-11-08 A → 2017-11-21 A (+13d) | 2017-11-08 A → 2017-11-21 A (+13d) |  |  |  | resources 李文杰 → 陈启强 [30%] |
| 57 | 撰写《学生代表确认文档》 | 2017-11-08 A → 2017-11-21 A (+13d) | 2017-11-08 A → 2017-11-21 A (+13d) |  |  |  | resources 陈启强 → 陈启强 [30%] |
| 58 | 撰写《管理员代表确认文档》 | 2017-11-08 A → 2017-11-21 A (+13d) | 2017-11-08 A → 2017-11-21 A (+13d) |  |  |  | resources 余泽伟 → 陈启强 [30%] |
| 59 | **撰写用例文档** |  | 2017-11-22 → 2017-11-26 (+4d) | 3.67d → 6.83d |  |  |  |
| 60 | 撰写《教师用例文档》 | 2017-11-24 → 2017-11-23 (-1d) |  |  |  |  | resources 李文杰 → 赵伟 [20%] |
| 61 | 撰写《学生用例文档》 | 2017-11-24 → 2017-11-23 (-1d) |  |  |  |  | resources 赵伟 → 陈启强 [20%] |
| 62 | 撰写《管理员用例文档》 | 2017-11-24 → 2017-11-23 (-1d) |  |  |  |  | resources 余泽伟 → 余泽伟 [20%] |
| 63 | 撰写《游客用例文档》 | 2017-11-24 → 2017-11-23 (-1d) |  |  |  |  | resources 陈启强 → 陈启强 [20%] |
| 64 | 《前景与范围文档》修改 | 2017-11-19 → 2017-11-14 (-5d) | 2017-11-19 → 2017-11-15 (-4d) | 0.67d → 1.67d |  |  | resources 李文杰 → 李文杰 [30%] |
| 65 | 撰写《数据字典》 | 2017-11-26 → 2017-11-23 (-3d) | 2017-11-26 → 2017-11-25 (-1d) | 0.67d → 1.67d |  |  | resources 赵伟; 余泽伟; 陈启强 → 余泽伟 [20%] |
| 66 | 提交《用例与用例文档》、界面原型、《前景与范围》、《用户群分类》 | 2017-11-20 → 2017-11-26 (+6d) | 2017-11-20 → 2017-11-26 (+6d) |  |  | 55, 49 → 55, 59, 64 |  |
| 67 | 修改《教师用例文档》 | 2017-11-22 → 2017-11-28 (+6d) | 2017-11-23 → 2017-11-29 (+6d) |  |  |  | resources 李文杰 [80%] → 赵伟 [20%] |
| 68 | 修改《管理员用例文档》 | 2017-11-22 → 2017-11-28 (+6d) | 2017-11-22 → 2017-11-28 (+6d) |  |  |  | resources 余泽伟 [80%] → 赵伟 [20%] |
| 69 | 草拟需求规格说明书 | 2017-11-21 → 2017-11-30 (+9d) | 2017-11-23 → 2017-12-03 (+10d) | 2d → 3d |  |  | resources 陈启强; 李文杰; 余泽伟; 赵伟 → 陈启强 [30%]; 李文杰 [30%]; 余泽伟 [30%]; 赵伟 [30%] |
| 74 | 修改数据字典 | 2017-11-08 A → 2017-11-28 A (+20d) | 2017-11-11 → 2017-11-30 (+19d) | 2d → 1.67d | 75% → 90% |  | resources 李文杰 [80%]; 赵伟 [80%]; 余泽伟 [80%] → 陈启强 [20%] |
| 75 | 提交《用例与用例文档》、界面原型、ER图、《需求规格说明书》 | 2017-12-04 → 2017-12-03 (-1d) | 2017-12-04 → 2017-12-03 (-1d) |  |  |  | resources 陈启强 → 陈启强 [5%] |
| 76 | 修改《软件需求规格说明书》 | 2017-11-24 → 2017-12-04 (+10d) | 2017-11-25 → 2017-12-05 (+10d) |  |  |  | resources 陈启强 [80%] → 陈启强 [20%]; 余泽伟 [20%]; 赵伟 [20%]; 李文杰 [20%] |
| 78 | 修改《教师测试用例》 | 2017-11-25 → 2017-11-28 (+3d) | 2017-11-25 → 2017-11-29 (+4d) | 0.67d → 1d |  | 修改《教师用例文档》 → none | resources 李文杰 [80%] → 赵伟 [20%] |
| 81 | 撰写《软件用户手册》 | 2017-11-21 → 2017-12-07 (+16d) | 2017-11-21 → 2017-12-10 (+19d) | 0.67d → 2.33d |  |  | resources 赵伟 → 赵伟 [20%] |

| ID | Task | Start | Finish | Duration | Other |
| --- | --- | --- | --- | --- | --- |
| 82 | 修改《软件用户手册》 |  |  |  | resources 李文杰 → 赵伟 [30%] |
| 83 | SRS评审 | 2017-11-26 → 2017-12-10 (+14d) | 2017-11-30 → 2017-12-14 (+14d) |  | resources 陈启强; 李文杰; 余泽伟; 赵伟 → 陈启强; 李文杰 [20%]; 余泽伟 [20%]; 赵伟 [20%] |
| 84 | 修改《软件需求规格说明书》 | 2017-12-23 → 2017-12-15 (-8d) | 2017-12-24 → 2017-12-16 (-8d) | 1.33d → 1.67d | resources 陈启强 [80%] → 陈启强 [50%] |
| 85 | JAD会议 | 2017-11-30 → 2017-12-21 (+21d) | 2017-12-01 → 2017-12-21 (+20d) |  | resources 李文杰; 赵伟; 余泽伟; 陈启强 → 李文杰 [50%]; 赵伟 [50%]; 余泽伟 [50%]; 陈启强 [50%] |
| 86 | **项目控制** | 2017-12-25 → 2017-12-20 (-5d) | 2017-12-31 → 2017-12-24 (-7d) | 5d → 3.67d |  |
| 87 | **需求变更** | 2017-12-25 → 2017-12-20 (-5d) | 2017-12-29 → 2017-12-24 (-5d) |  |  |
| 88 | 撰写《需求变更文档》并提交 | 2017-12-01 → 2017-12-20 (+19d) | 2017-12-04 → 2017-12-20 (+16d) | 2d → 1d | resources 余泽伟; 陈启强 → 赵伟 [50%]; 陈启强 [30%] |
| 89 | 撰写《需求变更申请报告》并提交 | 2017-12-01 → 2017-12-21 (+20d) | 2017-12-04 → 2017-12-21 (+17d) | 2d → 1d | resources 李文杰; 陈启强 → 陈启强 [20%] |
| 90 | 撰写CCB章程 | 2017-12-01 → 2017-12-22 (+21d) | 2017-12-03 → 2017-12-24 (+21d) |  | resources 赵伟 → 赵伟 [30%] |
| 91 | **项目收尾** | 2018-01-01 → 2018-01-02 (+1d) | 2018-01-17 → 2018-01-18 (+1d) | 11.33d → 11.67d |  |
| 92 | 撰写《项目绩效评价》 |  |  |  | resources 余泽伟 [150%] → 余泽伟 [20%] |
| 93 | 撰写《系统设计与实现计划》 | 2018-01-01 → 2018-01-04 (+3d) | 2018-01-02 → 2018-01-05 (+3d) |  | resources 李文杰 [200%] → 赵伟 [30%] |
| 94 | 撰写《软件概要设计说明》 |  |  |  | resources 陈启强 → 陈启强 [30%] |
| 95 | 撰写《测试计划》 |  |  |  | resources 李文杰 [200%] → 赵伟 [30%] |
| 96 | 撰写《安装部署计划》 |  |  |  | resources 余泽伟 [150%] → 余泽伟 [30%] |
| 97 | 撰写《培训计划》 | 2018-01-06 → 2018-01-04 (-2d) | 2018-01-08 → 2018-01-06 (-2d) |  | resources 李文杰 → 赵伟 [20%] |
| 98 | 撰写《系统维护计划》 | 2018-01-09 → 2018-01-04 (-5d) | 2018-01-10 → 2018-01-05 (-5d) |  | resources 赵伟 → 陈启强 [40%] |
| 99 | 修改整理各类旧文档及PPT | 2018-01-11 → 2018-01-10 (-1d) | 2018-01-11 → 2018-01-10 (-1d) |  | resources 赵伟; 陈启强; 李文杰; 余泽伟 → 陈启强 [30%] |
| 100 | 撰写《项目总结报告》及PPT | 2018-01-12 → 2018-01-11 (-1d) |  | 0.5d → 1.67d | resources 陈启强 → 陈启强 [70%] |
| 101 | 修改《项目总结报告》 | 2018-01-13 → 2018-01-16 (+3d) | 2018-01-13 → 2018-01-16 (+3d) | 0.67d → 1d | resources 陈启强 [80%] → 陈启强 [30%]; 李文杰 [30%]; 余泽伟 [30%]; 赵伟 [30%] |
| 102 | 评审 | 2018-01-14 → 2018-01-18 (+4d) | 2018-01-14 → 2018-01-18 (+4d) | 0d → 0.5d |  |
